# PLAN_AT_CC_v1_FECHAS

Schedule from MS Project, 2018-05-29 to 2018-09-06.

## Calendars

- Estándar: Mon-Fri 09:00-13:00, 15:00-19:00; Sat 09:00-21:00; Sun off.

## Schedule

| ID | WBS | Task | Duration | Start | Finish | Predecessors | Total slack | Free slack | Constraint | Work |
| --- | --- | --- | --- | --- | --- | --- | --- | --- | --- | --- |
| 1 | 1 | **001-ITSC_TMS Plan de Analisis y Desarrollo** | 94d? | 2018-05-29 | 2018-09-06 |  | 0d |  |  | 578h |
| 2 | 1.1 | Inicio de Actividades | 1d? | 2018-06-01 | 2018-06-01 |  | 0d |  | start no earlier than 2018-06-01 |  |
| 3 | 1.2 | **Modulo Catalogos Maestros** | 39d | 2018-06-02 | 2018-07-13 |  | 0d |  |  | 252h |
| 4 | 1.2.1 | **AT Analisis de Tecnico** | 19d | 2018-06-02 | 2018-06-22 |  | 0d |  |  | 136h |
| 5 | 1.2.1.1 | **IAT - Revisión de documentación entregada por Negocio** | 2d | 2018-06-02 | 2018-06-04 |  | 0d |  |  | 19h |
| 6 | 1.2.1.1.1 | AT - Requerimientos de Negocio (Junta de Entendimiento) | 1d | 2018-06-02 | 2018-06-02 | 2 | 0d |  |  | 6h |
| 7 | 1.2.1.1.2 | AT - Casos de Uso (Junta de Entendimiento) | 1d | 2018-06-02 | 2018-06-04 | 6 | 0d |  |  | 13h |
| 8 | 1.2.1.2 | **AT - Elaboracion de propuesta de Arquitectura de Solucion** | 3d | 2018-06-04 | 2018-06-07 |  | 0d |  |  | 26h |
| 9 | 1.2.1.2.1 | AT - Requerimientos tecnicos | 1d | 2018-06-04 | 2018-06-05 | 7 | 87d |  |  | 4h |
| 10 | 1.2.1.2.2 | AT - Analisis tecnico | 1d | 2018-06-04 | 2018-06-05 | 7 | 0d |  |  | 4h |
| 11 | 1.2.1.2.3 | AT - Requerimientos de solucion | 1d | 2018-06-05 | 2018-06-06 | 10 | 86d |  |  | 4h |
| 12 | 1.2.1.2.4 | AT - Escalabilidad | 1d | 2018-06-05 | 2018-06-06 | 10 | 0d |  |  | 4h |
| 13 | 1.2.1.2.5 | AT - Modelado BD | 1d | 2018-06-06 | 2018-06-07 | 12 | 85d |  |  | 4h |
| 14 | 1.2.1.2.6 | AT - Herramientas para solucion | 1d | 2018-06-06 | 2018-06-07 | 12 | 85d |  |  | 3h |
| 15 | 1.2.1.2.7 | AT - Aplicación responsiva para navegadores web | 1d | 2018-06-06 | 2018-06-07 | 12 | 85d |  |  | 3h |
| 16 | 1.2.1.3 | AT - Peer Review y Vo Bo Arquitectura de Solucion | 1d | 2018-06-06 | 2018-06-07 | 12 | 0d |  |  | 1h |
| 17 | 1.2.1.4 | **AT - Elaboración de documentos AT** | 14d | 2018-06-07 | 2018-06-22 |  | 0d |  |  | 90h |
| 18 | 1.2.1.4.1 | **AT - Modulo Catalogos Maestros** | 14d | 2018-06-07 | 2018-06-22 |  | 0d |  |  | 90h |
| 19 | 1.2.1.4.1.1 | **AT - Catalogo Rol** | 2d | 2018-06-07 | 2018-06-09 |  | 0d |  |  | 6h |
| 20 | 1.2.1.4.1.1.1 | AT - Elaboración Bocetos de Archivos | 1d | 2018-06-07 | 2018-06-08 | 16 | 0d |  |  | 3h |
| 21 | 1.2.1.4.1.1.2 | AT - Elaboración Bocetos de Pantallas | 1d | 2018-06-08 | 2018-06-09 | 20 | 0d |  |  | 3h |
| 22 | 1.2.1.4.1.2 | **AT - Catalogo Actores** | 2d | 2018-06-07 | 2018-06-09 |  | 81d |  |  | 6h |
| 23 | 1.2.1.4.1.2.1 | AT - Elaboración Bocetos de Archivos | 1d | 2018-06-07 | 2018-06-08 | 16 | 81d | 0d |  | 3h |
| 24 | 1.2.1.4.1.2.2 | AT - Elaboración Bocetos de Pantallas | 1d | 2018-06-08 | 2018-06-09 | 23 | 81d | 0d |  | 3h |

| ID | WBS | Task | Duration | Start | Finish | Predecessors | Total slack | Free slack | Work |
| --- | --- | --- | --- | --- | --- | --- | --- | --- | --- |
| 25 | 1.2.1.4.1.3 | **AT - Catalogo Actores-Roles** | 2d | 2018-06-09 | 2018-06-11 |  | 81d |  | 6h |
| 26 | 1.2.1.4.1.3.1 | AT - Elaboración Bocetos de Archivos | 1d | 2018-06-09 | 2018-06-09 | 21 | 81d | 0d | 3h |
| 27 | 1.2.1.4.1.3.2 | AT - Elaboración Bocetos de Pantallas | 1d | 2018-06-11 | 2018-06-11 | 26 | 81d |  | 3h |
| 28 | 1.2.1.4.1.4 | **AT - Catalogo Contratos** | 2d | 2018-06-09 | 2018-06-11 |  | 81d |  | 6h |
| 29 | 1.2.1.4.1.4.1 | AT - Elaboración Bocetos de Archivos | 1d | 2018-06-09 | 2018-06-09 | 24 | 81d | 0d | 3h |
| 30 | 1.2.1.4.1.4.2 | AT - Elaboración Bocetos de Pantallas | 1d | 2018-06-11 | 2018-06-11 | 29 | 81d |  | 3h |
| 31 | 1.2.1.4.1.5 | **AT - Catalogo Tipos de Tarifa** | 2d | 2018-06-09 | 2018-06-11 |  | 0d |  | 6h |
| 32 | 1.2.1.4.1.5.1 | AT - Elaboración Bocetos de Archivos | 1d | 2018-06-09 | 2018-06-09 | 21 | 0d |  | 3h |
| 33 | 1.2.1.4.1.5.2 | AT - Elaboración Bocetos de Pantallas | 1d | 2018-06-11 | 2018-06-11 | 32 | 0d |  | 3h |
| 34 | 1.2.1.4.1.6 | **AT - Catalogo Tarifa** | 2d | 2018-06-09 | 2018-06-11 |  | 73d |  | 6h |
| 35 | 1.2.1.4.1.6.1 | AT - Elaboración Bocetos de Archivos | 1d | 2018-06-09 | 2018-06-09 | 21 | 73d | 0d | 3h |
| 36 | 1.2.1.4.1.6.2 | AT - Elaboración Bocetos de Pantallas | 1d | 2018-06-11 | 2018-06-11 | 35 | 73d | 0d | 3h |
| 37 | 1.2.1.4.1.7 | **AT - Catalogo Conceptos de Tarifa** | 2d | 2018-06-12 | 2018-06-13 |  | 0d |  | 6h |
| 38 | 1.2.1.4.1.7.1 | AT - Elaboración Bocetos de Archivos | 1d | 2018-06-12 | 2018-06-12 | 33 | 0d |  | 3h |
| 39 | 1.2.1.4.1.7.2 | AT - Elaboración Bocetos de Pantallas | 1d | 2018-06-13 | 2018-06-13 | 38 | 0d |  | 3h |
| 40 | 1.2.1.4.1.8 | **AT - Catalogo Choferes** | 2d | 2018-06-12 | 2018-06-13 |  | 73d |  | 6h |
| 41 | 1.2.1.4.1.8.1 | AT - Elaboración Bocetos de Archivos | 1d | 2018-06-12 | 2018-06-12 | 36 | 73d | 0d | 3h |
| 42 | 1.2.1.4.1.8.2 | AT - Elaboración Bocetos de Pantallas | 1d | 2018-06-13 | 2018-06-13 | 41 | 73d | 0d | 3h |
| 43 | 1.2.1.4.1.9 | **AT - Catalogo Camiones** | 2d | 2018-06-14 | 2018-06-15 |  | 0d |  | 6h |
| 44 | 1.2.1.4.1.9.1 | AT - Elaboración Bocetos de Archivos | 1d | 2018-06-14 | 2018-06-14 | 39 | 0d |  | 3h |
| 45 | 1.2.1.4.1.9.2 | AT - Elaboración Bocetos de Pantallas | 1d | 2018-06-15 | 2018-06-15 | 44 | 0d |  | 3h |
| 46 | 1.2.1.4.1.10 | **AT - Catalogo Responsables de Incidencias** | 2d | 2018-06-14 | 2018-06-15 |  | 73d |  | 6h |
| 47 | 1.2.1.4.1.10.1 | AT - Elaboración Bocetos de Archivos | 1d | 2018-06-14 | 2018-06-14 | 42 | 73d | 0d | 3h |
| 48 | 1.2.1.4.1.10.2 | AT - Elaboración Bocetos de Pantallas | 1d | 2018-06-15 | 2018-06-15 | 47 | 73d | 0d | 3h |

| ID | WBS | Task | Duration | Start | Finish | Predecessors | Total slack | Free slack | Work |
| --- | --- | --- | --- | --- | --- | --- | --- | --- | --- |
| 49 | 1.2.1.4.1.11 | **AT - Catalogo Tipos de Incidencias** | 2d | 2018-06-16 | 2018-06-18 |  | 0d |  | 6h |
| 50 | 1.2.1.4.1.11.1 | AT - Elaboración Bocetos de Archivos | 1d | 2018-06-16 | 2018-06-16 | 45 | 0d |  | 3h |
| 51 | 1.2.1.4.1.11.2 | AT - Elaboración Bocetos de Pantallas | 1d | 2018-06-16 | 2018-06-18 | 50 | 0d |  | 3h |
| 52 | 1.2.1.4.1.12 | **AT - Catalogo Tipos de Viaje** | 2d | 2018-06-16 | 2018-06-18 |  | 73d |  | 6h |
| 53 | 1.2.1.4.1.12.1 | AT - Elaboración Bocetos de Archivos | 1d | 2018-06-16 | 2018-06-16 | 48 | 73d | 0d | 3h |
| 54 | 1.2.1.4.1.12.2 | AT - Elaboración Bocetos de Pantallas | 1d | 2018-06-16 | 2018-06-18 | 53 | 73d | 0d | 3h |
| 55 | 1.2.1.4.1.13 | **AT - Catalogo Tipos de Carga/Descarga** | 2d | 2018-06-18 | 2018-06-20 |  | 0d |  | 6h |
| 56 | 1.2.1.4.1.13.1 | AT - Elaboración Bocetos de Archivos | 1d | 2018-06-18 | 2018-06-19 | 51 | 0d |  | 3h |
| 57 | 1.2.1.4.1.13.2 | AT - Elaboración Bocetos de Pantallas | 1d | 2018-06-19 | 2018-06-20 | 56 | 0d |  | 3h |
| 58 | 1.2.1.4.1.14 | **AT - Catalogo Clientes de Entrega** | 2d | 2018-06-18 | 2018-06-20 |  | 73d |  | 6h |
| 59 | 1.2.1.4.1.14.1 | AT - Elaboración Bocetos de Archivos | 1d | 2018-06-18 | 2018-06-19 | 54 | 73d | 0d | 3h |
| 60 | 1.2.1.4.1.14.2 | AT - Elaboración Bocetos de Pantallas | 1d | 2018-06-19 | 2018-06-20 | 59 | 73d |  | 3h |
| 61 | 1.2.1.4.1.15 | **AT - Catalogo Clientes Solicidates** | 2d | 2018-06-20 | 2018-06-22 |  | 0d |  | 6h |
| 62 | 1.2.1.4.1.15.1 | AT - Elaboración Bocetos de Archivos | 1d | 2018-06-20 | 2018-06-21 | 57 | 0d |  | 3h |
| 63 | 1.2.1.4.1.15.2 | AT - Elaboración Bocetos de Pantallas | 1d | 2018-06-21 | 2018-06-22 | 62 | 0d |  | 3h |
| 64 | 1.2.2 | **CC_Desarrollo** | 19d | 2018-06-22 | 2018-07-12 |  | 0d |  | 86h |
| 65 | 1.2.2.1 | **Diseño y Construcción** | 19d | 2018-06-22 | 2018-07-12 |  | 0d |  | 86h |
| 66 | 1.2.2.1.1 | CC - Revision del documento de Arquitectura de Solucion | 1d | 2018-06-22 | 2018-06-23 | 63 | 0d |  | 3h |
| 67 | 1.2.2.1.2 | **CC - Instalacion y Configuracion** | 3d | 2018-06-23 | 2018-06-26 |  | 0d |  | 23h |
| 68 | 1.2.2.1.2.1 | CC - Instalacion de herramientas de desarrollo | 1d | 2018-06-23 | 2018-06-23 | 66 | 0d |  | 9h |
| 69 | 1.2.2.1.2.2 | CC - Instalacion de herramientas de gestion de Bases de Datos | 1d | 2018-06-25 | 2018-06-25 | 68 | 0d |  | 9h |
| 70 | 1.2.2.1.2.3 | CC - Instalacion de herramienta para soportar aplicaciones web | 1d | 2018-06-26 | 2018-06-26 | 69 | 0d |  | 5h |
| 71 | 1.2.2.1.3 | **CC - Desarrollo** | 15d | 2018-06-27 | 2018-07-12 |  | 0d |  | 60h |
| 72 | 1.2.2.1.3.1 | **CC - Modulo Catalogos Maestros** | 15d | 2018-06-27 | 2018-07-12 |  | 0d |  | 60h |
| 73 | 1.2.2.1.3.1.1 | CC - Catalogo Rol | 1d | 2018-06-27 | 2018-06-27 | 70 | 0d |  | 4h |
| 74 | 1.2.2.1.3.1.2 | CC - Catalogo Actores | 1d | 2018-06-28 | 2018-06-28 | 73 | 0d |  | 4h |
| 75 | 1.2.2.1.3.1.3 | CC - Catalogo Actores-Roles | 1d | 2018-06-29 | 2018-06-29 | 74 | 0d |  | 4h |
| 76 | 1.2.2.1.3.1.4 | CC - Catalogo Contratos | 1d | 2018-06-30 | 2018-06-30 | 75 | 0d |  | 4h |
| 77 | 1.2.2.1.3.1.5 | CC - Catalogo Tipos de Tarifa | 1d | 2018-06-30 | 2018-07-02 | 76 | 0d |  | 4h |
| 78 | 1.2.2.1.3.1.6 | CC - Catalogo Tarifa | 1d | 2018-07-02 | 2018-07-03 | 77 | 0d |  | 4h |
| 79 | 1.2.2.1.3.1.7 | CC - Catalogo Conceptos de Tarifa | 1d | 2018-07-03 | 2018-07-04 | 78 | 0d |  | 4h |
| 80 | 1.2.2.1.3.1.8 | CC - Catalogo Choferes | 1d | 2018-07-04 | 2018-07-05 | 79 | 0d |  | 4h |
| 81 | 1.2.2.1.3.1.9 | CC - Catalogo Camiones | 1d | 2018-07-05 | 2018-07-06 | 80 | 0d |  | 4h |
| 82 | 1.2.2.1.3.1.10 | CC - Catalogo Responsables de Incidencias | 1d | 2018-07-06 | 2018-07-07 | 81 | 0d |  | 4h |
| 83 | 1.2.2.1.3.1.11 | CC - Catalogo Tipos de Incidencias | 1d | 2018-07-07 | 2018-07-07 | 82 | 0d |  | 4h |
| 84 | 1.2.2.1.3.1.12 | CC - Catalogo Tipos de Viaje | 1d | 2018-07-09 | 2018-07-09 | 83 | 0d |  | 4h |
| 85 | 1.2.2.1.3.1.13 | CC - Catalogo Tipos de Carga/Descarga | 1d | 2018-07-10 | 2018-07-10 | 84 | 0d |  | 4h |
| 86 | 1.2.2.1.3.1.14 | CC - Catalogo Clientes de Entrega | 1d | 2018-07-11 | 2018-07-11 | 85 | 0d |  | 4h |
| 87 | 1.2.2.1.3.1.15 | CC - Catalogo Clientes Solicidates | 1d | 2018-07-12 | 2018-07-12 | 86 | 0d |  | 4h |

| ID | WBS | Task | Duration | Start | Finish | Predecessors | Total slack | Work |
| --- | --- | --- | --- | --- | --- | --- | --- | --- |
| 88 | 1.2.3 | **PU - Pruebas Untarias** | 15d | 2018-06-28 | 2018-07-13 |  | 14d | 30h |
| 89 | 1.2.3.1 | **PU - Modulo Catalogos Maestros** | 15d | 2018-06-28 | 2018-07-13 |  | 14d | 30h |
| 90 | 1.2.3.1.1 | PU - Catalogo Rol | 1d | 2018-06-28 | 2018-06-28 | 73 | 65d | 2h |
| 91 | 1.2.3.1.2 | PU - Catalogo Actores | 1d | 2018-06-29 | 2018-06-29 | 74 | 64d | 2h |
| 92 | 1.2.3.1.3 | PU - Catalogo Actores-Roles | 1d | 2018-06-30 | 2018-06-30 | 75 | 63d | 2h |
| 93 | 1.2.3.1.4 | PU - Catalogo Contratos | 1d | 2018-06-30 | 2018-07-02 | 76 | 62d | 2h |
| 94 | 1.2.3.1.5 | PU - Catalogo Tipos de Tarifa | 1d | 2018-07-02 | 2018-07-03 | 77 | 61d | 2h |
| 95 | 1.2.3.1.6 | PU - Catalogo Tarifa | 1d | 2018-07-03 | 2018-07-04 | 78 | 60d | 2h |
| 96 | 1.2.3.1.7 | PU - Catalogo Conceptos de Tarifa | 1d | 2018-07-04 | 2018-07-05 | 79 | 59d | 2h |
| 97 | 1.2.3.1.8 | PU - Catalogo Choferes | 1d | 2018-07-05 | 2018-07-06 | 80 | 58d | 2h |
| 98 | 1.2.3.1.9 | PU - Catalogo Camiones | 1d | 2018-07-06 | 2018-07-07 | 81 | 57d | 2h |
| 99 | 1.2.3.1.10 | PU - Catalogo Responsables de Incidencias | 1d | 2018-07-07 | 2018-07-07 | 82 | 56d | 2h |
| 100 | 1.2.3.1.11 | PU - Catalogo Tipos de Incidencias | 1d | 2018-07-09 | 2018-07-09 | 83 | 55d | 2h |
| 101 | 1.2.3.1.12 | PU - Catalogo Tipos de Viaje | 1d | 2018-07-10 | 2018-07-10 | 84 | 54d | 2h |
| 102 | 1.2.3.1.13 | PU - Catalogo Tipos de Carga/Descarga | 1d | 2018-07-11 | 2018-07-11 | 85 | 53d | 2h |
| 103 | 1.2.3.1.14 | PU - Catalogo Clientes de Entrega | 1d | 2018-07-12 | 2018-07-12 | 86 | 52d | 2h |
| 104 | 1.2.3.1.15 | PU - Catalogo Clientes Solicidates | 1d | 2018-07-13 | 2018-07-13 | 87 | 0d | 2h |
| 105 | 1.3 | LB - Liberacion Modulo 1 | 1d | 2018-07-14 | 2018-07-14 | 104 | 0d | 2h |
| 106 | 1.4 | **Modulo Seguridad** | 15d | 2018-07-14 | 2018-07-31 |  | 0d | 87h |
| 107 | 1.4.1 | **AT Analisis de Tecnico** | 6d | 2018-07-14 | 2018-07-21 |  | 0d | 39h |
| 108 | 1.4.1.1 | **IAT - Revisión de documentación entregada por Negocio** | 2d | 2018-07-14 | 2018-07-17 |  | 0d | 19h |
| 109 | 1.4.1.1.1 | AT - Requerimientos de Negocio (Junta de Entendimiento) | 1d | 2018-07-14 | 2018-07-16 | 105 | 0d | 6h |
| 110 | 1.4.1.1.2 | AT - Casos de Uso (Junta de Entendimiento) | 1d | 2018-07-16 | 2018-07-17 | 109 | 0d | 13h |
| 111 | 1.4.1.2 | **AT - Actualizacion de propuesta de Arquitectura de Solucion** | 4d | 2018-07-17 | 2018-07-21 |  | 0d | 19h |
| 112 | 1.4.1.2.1 | AT - Requerimientos tecnicos | 1d | 2018-07-17 | 2018-07-18 | 110 | 47d | 3h |
| 113 | 1.4.1.2.2 | AT - Analisis tecnico | 1d | 2018-07-17 | 2018-07-18 | 110 | 0d | 3h |
| 114 | 1.4.1.2.3 | AT - Requerimientos de solucion | 1d | 2018-07-18 | 2018-07-19 | 113 | 46d | 3h |
| 115 | 1.4.1.2.4 | AT - Escalabilidad | 1d | 2018-07-18 | 2018-07-19 | 113 | 0d | 3h |
| 116 | 1.4.1.2.5 | AT - Modelado BD | 1d | 2018-07-19 | 2018-07-20 | 115 | 45d | 3h |
| 117 | 1.4.1.2.6 | AT - Herramientas para solucion | 1d | 2018-07-19 | 2018-07-20 | 115 | 0d | 2h |
| 118 | 1.4.1.2.7 | AT - Aplicación responsiva para navegadores web | 1d | 2018-07-20 | 2018-07-21 | 117 | 44d | 2h |
| 119 | 1.4.1.3 | AT - Peer Review y Vo Bo Arquitectura de Solucion | 1d | 2018-07-20 | 2018-07-21 | 117 | 0d | 1h |

| ID | WBS | Task | Duration | Start | Finish | Predecessors | Total slack | Free slack | Work |
| --- | --- | --- | --- | --- | --- | --- | --- | --- | --- |
| 120 | 1.4.2 | **AT - Modulo Seguridad** | 4d | 2018-07-21 | 2018-07-25 |  | 0d |  | 18h |
| 121 | 1.4.2.1 | **AT - Roles** | 2d | 2018-07-21 | 2018-07-23 |  | 0d |  | 6h |
| 122 | 1.4.2.1.1 | AT - Elaboración Bocetos de Archivos | 1d | 2018-07-21 | 2018-07-21 | 119 | 0d |  | 3h |
| 123 | 1.4.2.1.2 | AT - Elaboración Bocetos de Pantallas | 1d | 2018-07-23 | 2018-07-23 | 122 | 0d |  | 3h |
| 124 | 1.4.2.2 | **AT - Configuracion** | 2d | 2018-07-21 | 2018-07-23 |  | 42d |  | 6h |
| 125 | 1.4.2.2.1 | AT - Elaboración Bocetos de Archivos | 1d | 2018-07-21 | 2018-07-21 | 119 | 42d | 0d | 3h |
| 126 | 1.4.2.2.2 | AT - Elaboración Bocetos de Pantallas | 1d | 2018-07-23 | 2018-07-23 | 125 | 42d |  | 3h |
| 127 | 1.4.2.3 | **AT - Permisos** | 2d | 2018-07-24 | 2018-07-25 |  | 0d |  | 6h |
| 128 | 1.4.2.3.1 | AT - Elaboración Bocetos de Archivos | 1d | 2018-07-24 | 2018-07-24 | 123 | 0d |  | 3h |
| 129 | 1.4.2.3.2 | AT - Elaboración Bocetos de Pantallas | 1d | 2018-07-25 | 2018-07-25 | 128 | 0d |  | 3h |
| 130 | 1.4.3 | **CC - Modulo Seguridad** | 4d | 2018-07-26 | 2018-07-30 |  | 0d |  | 24h |
| 131 | 1.4.3.1 | **Diseño y Construcción** | 1d | 2018-07-26 | 2018-07-26 |  | 0d |  | 2h |
| 132 | 1.4.3.1.1 | CC - Revision del documento de Arquitectura de Solucion | 1d | 2018-07-26 | 2018-07-26 | 129 | 0d |  | 2h |
| 133 | 1.4.3.2 | CC - Roles | 1d | 2018-07-27 | 2018-07-27 | 132 | 0d |  | 7h |
| 134 | 1.4.3.3 | CC - Configuracion | 1d | 2018-07-28 | 2018-07-28 | 133 | 0d |  | 7h |
| 135 | 1.4.3.4 | CC - Permisos | 1d | 2018-07-28 | 2018-07-30 | 134 | 0d |  | 8h |
| 136 | 1.4.4 | **PU - Modulo Seguridad** | 3d | 2018-07-28 | 2018-07-31 |  | 2d |  | 6h |
| 137 | 1.4.4.1 | PU - Roles | 1d | 2018-07-28 | 2018-07-28 | 133 | 37d |  | 2h |
| 138 | 1.4.4.2 | PU - Configuracion | 1d | 2018-07-28 | 2018-07-30 | 134 | 36d |  | 2h |
| 139 | 1.4.4.3 | PU - Permisos | 1d | 2018-07-30 | 2018-07-31 | 135 | 0d |  | 2h |
| 140 | 1.5 | LB - Liberacion Modulo 2 | 1d? | 2018-07-31 | 2018-08-01 | 139 | 0d |  | 2h |
| 141 | 1.6 | **Modulo Solicitud** | 21d | 2018-08-01 | 2018-08-23 |  | 0d |  | 149h |
| 142 | 1.6.1 | **AT Analisis de Tecnico** | 6d | 2018-08-01 | 2018-08-07 |  | 0d |  | 39h |
| 143 | 1.6.1.1 | **IAT - Revisión de documentación entregada por Negocio** | 2d | 2018-08-01 | 2018-08-03 |  | 0d |  | 19h |
| 144 | 1.6.1.1.1 | AT - Requerimientos de Negocio (Junta de Entendimiento) | 1d | 2018-08-01 | 2018-08-02 | 140 | 0d |  | 6h |
| 145 | 1.6.1.1.2 | AT - Casos de Uso (Junta de Entendimiento) | 1d | 2018-08-02 | 2018-08-03 | 144 | 32d |  | 13h |

| ID | WBS | Task | Duration | Start | Finish | Predecessors | Total slack | Free slack | Work |
| --- | --- | --- | --- | --- | --- | --- | --- | --- | --- |
| 146 | 1.6.1.2 | **AT - Actualizacion de propuesta de Arquitectura de Solucion** | 4d | 2018-08-02 | 2018-08-06 |  | 0d |  | 19h |
| 147 | 1.6.1.2.1 | AT - Requerimientos tecnicos | 1d | 2018-08-02 | 2018-08-03 | 144 | 32d |  | 3h |
| 148 | 1.6.1.2.2 | AT - Analisis tecnico | 1d | 2018-08-02 | 2018-08-03 | 144 | 0d |  | 3h |
| 149 | 1.6.1.2.3 | AT - Requerimientos de solucion | 1d | 2018-08-03 | 2018-08-04 | 148 | 31d |  | 3h |
| 150 | 1.6.1.2.4 | AT - Escalabilidad | 1d | 2018-08-03 | 2018-08-04 | 148 | 0d |  | 3h |
| 151 | 1.6.1.2.5 | AT - Modelado BD | 1d | 2018-08-04 | 2018-08-04 | 150 | 30d |  | 3h |
| 152 | 1.6.1.2.6 | AT - Herramientas para solucion | 1d | 2018-08-04 | 2018-08-04 | 150 | 0d |  | 2h |
| 153 | 1.6.1.2.7 | AT - Aplicación responsiva para navegadores web | 1d | 2018-08-06 | 2018-08-06 | 152 | 0d |  | 2h |
| 154 | 1.6.1.3 | AT - Peer Review y Vo Bo Arquitectura de Solucion | 1d | 2018-08-07 | 2018-08-07 | 153 | 28d |  | 1h |
| 155 | 1.6.2 | **AT - Modulo Solicitudes** | 6d | 2018-08-07 | 2018-08-13 |  | 0d |  | 40h |
| 156 | 1.6.2.1 | **AT - Cliente - Solicitud de Transporte** | 2d | 2018-08-07 | 2018-08-08 |  | 25d |  | 8h |
| 157 | 1.6.2.1.1 | AT - Elaboración Bocetos de Archivos | 1d | 2018-08-07 | 2018-08-07 | 153 | 25d | 0d | 4h |
| 158 | 1.6.2.1.2 | AT - Elaboración Bocetos de Pantallas | 1d | 2018-08-08 | 2018-08-08 | 157 | 25d | 0d | 4h |
| 159 | 1.6.2.2 | **AT - Trafico - Valoracion del Viaje** | 2d | 2018-08-07 | 2018-08-08 |  | 0d |  | 8h |
| 160 | 1.6.2.2.1 | AT - Elaboración Bocetos de Archivos | 1d | 2018-08-07 | 2018-08-07 | 153 | 0d |  | 4h |
| 161 | 1.6.2.2.2 | AT - Elaboración Bocetos de Pantallas | 1d | 2018-08-08 | 2018-08-08 | 160 | 0d |  | 4h |
| 162 | 1.6.2.3 | **AT - Distribucion - Asugnacion de Unidad y Carga** | 2d | 2018-08-09 | 2018-08-10 |  | 25d |  | 8h |
| 163 | 1.6.2.3.1 | AT - Elaboración Bocetos de Archivos | 1d | 2018-08-09 | 2018-08-09 | 158 | 25d | 0d | 4h |
| 164 | 1.6.2.3.2 | AT - Elaboración Bocetos de Pantallas | 1d | 2018-08-10 | 2018-08-10 | 163 | 25d |  | 4h |
| 165 | 1.6.2.4 | **AT - Operador CL - Operación y Descarga** | 2d | 2018-08-09 | 2018-08-10 |  | 0d |  | 8h |
| 166 | 1.6.2.4.1 | AT - Elaboración Bocetos de Archivos | 1d | 2018-08-09 | 2018-08-09 | 161 | 0d |  | 4h |
| 167 | 1.6.2.4.2 | AT - Elaboración Bocetos de Pantallas | 1d | 2018-08-10 | 2018-08-10 | 166 | 0d |  | 4h |
| 168 | 1.6.2.5 | **AT - Distribucion - Cierre del Viaje y Facturacion** | 2d | 2018-08-11 | 2018-08-13 |  | 0d |  | 8h |
| 169 | 1.6.2.5.1 | AT - Elaboración Bocetos de Archivos | 1d | 2018-08-11 | 2018-08-11 | 167 | 0d |  | 4h |
| 170 | 1.6.2.5.2 | AT - Elaboración Bocetos de Pantallas | 1d | 2018-08-11 | 2018-08-13 | 169 | 0d |  | 4h |

| ID | WBS | Task | Duration | Start | Finish | Predecessors | Total slack | Free slack | Work |
| --- | --- | --- | --- | --- | --- | --- | --- | --- | --- |
| 171 | 1.6.3 | **CC - Modulo Solicitudes** | 10d | 2018-08-13 | 2018-08-23 |  | 0d |  | 55h |
| 172 | 1.6.3.1 | **Diseño y Construcción** | 1d | 2018-08-13 | 2018-08-14 |  | 0d |  | 2h |
| 173 | 1.6.3.1.1 | CC - Revision del documento de Arquitectura de Solucion | 1d | 2018-08-13 | 2018-08-14 | 170 | 0d |  | 2h |
| 174 | 1.6.3.2 | CC - Cliente - Solicitud de Transporte | 1d | 2018-08-14 | 2018-08-15 | 173 | 0d |  | 7h |
| 175 | 1.6.3.3 | CC - Trafico - Valoracion del Viaje | 1d | 2018-08-15 | 2018-08-16 | 174 | 0d |  | 7h |
| 176 | 1.6.3.4 | CC - Distribucion - Asugnacion de Unidad y Carga | 1d | 2018-08-16 | 2018-08-17 | 175 | 0d |  | 7h |
| 177 | 1.6.3.5 | CC - Operador CL - Operación y Descarga | 1d | 2018-08-17 | 2018-08-18 | 176 | 0d |  | 7h |
| 178 | 1.6.3.6 | CC - Distribucion - Cierre del Viaje y Facturacion | 1d | 2018-08-18 | 2018-08-18 | 177 | 0d |  | 7h |
| 179 | 1.6.3.7 | **CC - Primer Check point operativo** | 2d | 2018-08-20 | 2018-08-21 |  | 13d |  | 9h |
| 180 | 1.6.3.7.1 | CC - Primer Check point operativo | 1d | 2018-08-20 | 2018-08-20 | 178 | 13d | 0d | 2h |
| 181 | 1.6.3.7.2 | CC - Actualizacion de los puntos del primer Ckeckpoint | 1d | 2018-08-21 | 2018-08-21 | 180 | 13d | 0d | 7h |
| 182 | 1.6.3.8 | **CC - Segundo Check point operativo** | 2d | 2018-08-22 | 2018-08-23 |  | 13d |  | 9h |
| 183 | 1.6.3.8.1 | CC - Segundo Check point operativo | 1d | 2018-08-22 | 2018-08-22 | 181 | 13d | 0d | 2h |
| 184 | 1.6.3.8.2 | CC - Actualizacion de los puntos del segundo Check point operativo | 1d | 2018-08-23 | 2018-08-23 | 183 | 13d |  | 7h |
| 185 | 1.6.4 | **PU - Modulo Solicitudes** | 5d | 2018-08-15 | 2018-08-20 |  | 4d |  | 15h |
| 186 | 1.6.4.1 | PU - Cliente - Solicitud de Transporte | 1d | 2018-08-15 | 2018-08-16 | 174 | 20d |  | 3h |
| 187 | 1.6.4.2 | PU - Trafico - Valoracion del Viaje | 1d | 2018-08-16 | 2018-08-17 | 175 | 19d |  | 3h |
| 188 | 1.6.4.3 | PU - Distribucion - Asugnacion de Unidad y Carga | 1d | 2018-08-17 | 2018-08-18 | 176 | 18d |  | 3h |
| 189 | 1.6.4.4 | PU - Operador CL - Operación y Descarga | 1d | 2018-08-18 | 2018-08-18 | 177 | 17d |  | 3h |
| 190 | 1.6.4.5 | PU - Distribucion - Cierre del Viaje y Facturacion | 1d | 2018-08-20 | 2018-08-20 | 178 | 0d |  | 3h |
| 191 | 1.7 | LB - Liberacion Modulo 2 | 1d? | 2018-08-21 | 2018-08-21 | 190 | 0d |  | 3h |
| 192 | 1.8 | **Modulo Alarmas** | 15d | 2018-08-22 | 2018-09-06 |  | 0d |  | 81h |
| 193 | 1.8.1 | **AT Analisis de Tecnico** | 6d | 2018-08-22 | 2018-08-28 |  | 0d |  | 34h |
| 194 | 1.8.1.1 | **IAT - Revisión de documentación entregada por Negocio** | 2d | 2018-08-22 | 2018-08-23 |  | 0d |  | 19h |
| 195 | 1.8.1.1.1 | AT - Requerimientos de Negocio (Junta de Entendimiento) | 1d | 2018-08-22 | 2018-08-22 | 191 | 0d |  | 6h |
| 196 | 1.8.1.1.2 | AT - Casos de Uso (Junta de Entendimiento) | 1d | 2018-08-23 | 2018-08-23 | 195 | 0d |  | 13h |

| ID | WBS | Task | Duration | Start | Finish | Predecessors | Total slack | Free slack | Work |
| --- | --- | --- | --- | --- | --- | --- | --- | --- | --- |
| 197 | 1.8.1.2 | **AT - Actualizacion de propuesta de Arquitectura de Solucion** | 4d | 2018-08-24 | 2018-08-28 |  | 0d |  | 14h |
| 198 | 1.8.1.2.1 | AT - Requerimientos tecnicos | 1d | 2018-08-24 | 2018-08-24 | 196 | 12d |  | 2h |
| 199 | 1.8.1.2.2 | AT - Analisis tecnico | 1d | 2018-08-24 | 2018-08-24 | 196 | 0d |  | 2h |
| 200 | 1.8.1.2.3 | AT - Requerimientos de solucion | 1d | 2018-08-25 | 2018-08-25 | 199 | 11d |  | 2h |
| 201 | 1.8.1.2.4 | AT - Escalabilidad | 1d | 2018-08-25 | 2018-08-25 | 199 | 0d |  | 2h |
| 202 | 1.8.1.2.5 | AT - Modelado BD | 1d | 2018-08-25 | 2018-08-27 | 201 | 10d |  | 2h |
| 203 | 1.8.1.2.6 | AT - Herramientas para solucion | 1d | 2018-08-25 | 2018-08-27 | 201 | 0d |  | 2h |
| 204 | 1.8.1.2.7 | AT - Aplicación responsiva para navegadores web | 1d | 2018-08-27 | 2018-08-28 | 203 | 9d |  | 2h |
| 205 | 1.8.1.3 | AT - Peer Review y Vo Bo Arquitectura de Solucion | 1d | 2018-08-27 | 2018-08-28 | 203 | 0d |  | 1h |
| 206 | 1.8.2 | **AT - Modulo Alarmas/Reportes/Indicadores de gestión** | 4d | 2018-08-28 | 2018-09-01 |  | 0d |  | 18h |
| 207 | 1.8.2.1 | **AT - Alarmas** | 2d | 2018-08-28 | 2018-08-30 |  | 7d |  | 6h |
| 208 | 1.8.2.1.1 | AT - Elaboración Bocetos de Archivos | 1d | 2018-08-28 | 2018-08-29 | 205 | 7d | 0d | 3h |
| 209 | 1.8.2.1.2 | AT - Elaboración Bocetos de Pantallas | 1d | 2018-08-29 | 2018-08-30 | 208 | 7d |  | 3h |
| 210 | 1.8.2.2 | **AT - Reportes** | 2d | 2018-08-28 | 2018-08-30 |  | 0d |  | 6h |
| 211 | 1.8.2.2.1 | AT - Elaboración Bocetos de Archivos | 1d | 2018-08-28 | 2018-08-29 | 205 | 0d |  | 3h |
| 212 | 1.8.2.2.2 | AT - Elaboración Bocetos de Pantallas | 1d | 2018-08-29 | 2018-08-30 | 211 | 0d |  | 3h |
| 213 | 1.8.2.3 | **AT - Indicadores de gestión** | 2d | 2018-08-30 | 2018-09-01 |  | 0d |  | 6h |
| 214 | 1.8.2.3.1 | AT - Elaboración Bocetos de Archivos | 1d | 2018-08-30 | 2018-08-31 | 212 | 0d |  | 3h |
| 215 | 1.8.2.3.2 | AT - Elaboración Bocetos de Pantallas | 1d | 2018-08-31 | 2018-09-01 | 214 | 0d |  | 3h |
| 216 | 1.8.3 | **CC - Modulo Alarmas/Reportes/Indicadores de gestión** | 4d | 2018-09-01 | 2018-09-05 |  | 0d |  | 20h |
| 217 | 1.8.3.1 | **Diseño y Construcción** | 1d | 2018-09-01 | 2018-09-01 |  | 0d |  | 2h |
| 218 | 1.8.3.1.1 | CC - Revision del documento de Arquitectura de Solucion | 1d | 2018-09-01 | 2018-09-01 | 215 | 0d |  | 2h |
| 219 | 1.8.3.2 | CC - Alarmas | 1d | 2018-09-03 | 2018-09-03 | 218 | 0d |  | 6h |
| 220 | 1.8.3.3 | CC - Reportes | 1d | 2018-09-04 | 2018-09-04 | 219 | 0d |  | 6h |
| 221 | 1.8.3.4 | CC - Indicadores de gestión | 1d | 2018-09-05 | 2018-09-05 | 220 | 0d |  | 6h |

| ID | WBS | Task | Duration | Start | Finish | Predecessors | Total slack | Work |
| --- | --- | --- | --- | --- | --- | --- | --- | --- |
| 222 | 1.8.4 | **PU - Modulo Alarmas/Reportes/Indicadores de gestión** | 3d | 2018-09-04 | 2018-09-06 |  | 0d | 9h |
| 223 | 1.8.4.1 | PU - Alarmas | 1d | 2018-09-04 | 2018-09-04 | 219 | 2d | 3h |
| 224 | 1.8.4.2 | PU - Reportes | 1d | 2018-09-05 | 2018-09-05 | 220 | 1d | 3h |
| 225 | 1.8.4.3 | PU - Indicadores de gestión | 1d | 2018-09-06 | 2018-09-06 | 221 | 0d | 3h |
| 226 | 1.9 | LB - Liberacion Modulo 3 | 1d | 2018-05-29 | 2018-05-29 |  | 93d | 2h |
