# Plan_AN_AT_CC_v29052018.xls

Schedule from MS Project, 2018-05-24 to 2018-08-29, status date 2018-05-29, 4 hours a day, A marks actual dates.

## Calendars

- Estándar: Mon-Fri 09:00-13:00, 15:00-19:00; Sat-Sun off.

## Resources

| Resource |
| --- |
| Omar Santiago/Fernando Nava |
| ITSC |
| Omar Santiago |
| cliente |
| Fernando Nava |
| Omar Santiago/Fernando Nava/ITSC |
| Omar Santiago/ITSC |

## Schedule

| ID | WBS | Task | Duration | Start | Finish | Predecessors | Complete | Remaining | Actual start | Baseline start | Baseline finish | Baseline duration | Total slack | Free slack | Resources | Work | Actual work |
| --- | --- | --- | --- | --- | --- | --- | --- | --- | --- | --- | --- | --- | --- | --- | --- | --- | --- |
| 1 | 1 | **001-ITSC_TMS Plan de Analisis y Desarrollo** | 124d? | 2018-06-04 | 2018-08-29 |  | 1% | 122.95d? | 2018-05-24 | 2018-05-24 | 2018-08-21 | 126.22d? |  |  |  | 778.5h | 9h |
| 2 | 1.1 | **AN_Analisis** | 80.17d? | 2018-05-24 A | 2018-07-19 |  | 1% | 79.01d? |  | 2018-05-24 | 2018-08-02 | 101.22d? | 59.82d |  |  | 459.5h | 9h |
| 3 | 1.1.1 | **AN Analisis de Negocio** | 72.53d? | 2018-05-24 A | 2018-07-13 |  | 3% | 70.51d? |  | 2018-05-24 | 2018-05-30 | 10d | 67.47d |  |  | 152h | 5h |
| 4 | 1.1.1.1 | **AN - Modulo Catalogos Maestros** | 62.55d? | 2018-05-24 A | 2018-07-06 |  | 1% | 61.74d? |  | 2018-05-24 | 2018-07-05 | 61.62d? | 77.45d |  |  | 105h | 4h |
| 5 | 1.1.1.1.1 | **AN - Catalogo Rol** | 5.6d | 2018-06-05 | 2018-06-07 |  |  |  |  | 2018-06-15 | 2018-06-19 | 4.8d | 77.45d |  |  | 7h |  |
| 6 | 1.1.1.1.1.1 | AN - Requerimientos de Negocio | 1.6d | 2018-06-05 | 2018-06-05 |  |  |  |  | 2018-06-15 | 2018-06-18 | 2.4d | 77.45d | 0d | Fernando Nava [31.2%] | 2h |  |
| 7 | 1.1.1.1.1.2 | AN - Casos de Uso | 4d | 2018-06-05 | 2018-06-07 | 6 |  |  |  | 2018-06-18 | 2018-06-19 | 2.4d | 77.45d | 0d | Fernando Nava [31.2%] | 5h |  |
| 8 | 1.1.1.1.2 | **AN - Catalogo Actores** | 1.75d? | 2018-06-07 | 2018-06-08 |  |  |  |  | 2018-06-15 | 2018-06-18 | 1.5d? | 77.45d |  |  | 7h |  |
| 9 | 1.1.1.1.2.1 | AN - Requerimientos de Negocio | 0.5d? | 2018-06-07 | 2018-06-08 | 7 |  |  |  | 2018-06-15 | 2018-06-15 | 0.75d? | 77.45d | 0d | Fernando Nava | 2h |  |
| 10 | 1.1.1.1.2.2 | AN - Casos de Uso | 1.25d? | 2018-06-08 | 2018-06-08 | 9 |  |  |  | 2018-06-15 | 2018-06-18 | 0.75d? | 77.45d | 0d | Fernando Nava | 5h |  |
| 11 | 1.1.1.1.3 | **AN - Catalogo Actores-Roles** | 5.6d? | 2018-06-08 | 2018-06-13 |  |  |  |  | 2018-06-18 | 2018-06-20 | 4.8d? | 77.45d |  |  | 7h |  |
| 12 | 1.1.1.1.3.1 | AN - Requerimientos de Negocio | 1.6d? | 2018-06-08 | 2018-06-11 | 10 |  |  |  | 2018-06-18 | 2018-06-19 | 2.4d? | 77.45d | 0d | Fernando Nava [31.2%] | 2h |  |
| 13 | 1.1.1.1.3.2 | AN - Casos de Uso | 4d? | 2018-06-11 | 2018-06-13 | 12 |  |  |  | 2018-06-19 | 2018-06-20 | 2.4d? | 77.45d | 0d | Fernando Nava [31.2%] | 5h |  |
| 14 | 1.1.1.1.4 | **AN - Catalogo Contratos** | 5.6d? | 2018-06-13 | 2018-06-18 |  |  |  |  | 2018-06-18 | 2018-06-20 | 4.8d? | 77.45d |  |  | 7h |  |
| 15 | 1.1.1.1.4.1 | AN - Requerimientos de Negocio | 1.6d? | 2018-06-13 | 2018-06-14 | 13 |  |  |  | 2018-06-18 | 2018-06-19 | 2.4d? | 77.45d | 0d | Fernando Nava [31.2%] | 2h |  |
| 16 | 1.1.1.1.4.2 | AN - Casos de Uso | 4d? | 2018-06-14 | 2018-06-18 | 15 |  |  |  | 2018-06-19 | 2018-06-20 | 2.4d? | 77.45d | 0d | Fernando Nava [31.2%] | 5h |  |
| 17 | 1.1.1.1.5 | **AN - Catalogo Tipos de Tarifa** | 5.6d? | 2018-06-18 | 2018-06-21 |  |  |  |  | 2018-06-20 | 2018-06-22 | 4.8d? | 77.45d |  |  | 7h |  |
| 18 | 1.1.1.1.5.1 | AN - Requerimientos de Negocio | 1.6d? | 2018-06-18 | 2018-06-19 | 16 |  |  |  | 2018-06-20 | 2018-06-21 | 2.4d? | 77.45d | 0d | Fernando Nava [31.2%] | 2h |  |
| 19 | 1.1.1.1.5.2 | AN - Casos de Uso | 4d? | 2018-06-19 | 2018-06-21 | 18 |  |  |  | 2018-06-21 | 2018-06-22 | 2.4d? | 77.45d | 0d | Fernando Nava [31.2%] | 5h |  |
| 20 | 1.1.1.1.6 | **AN - Catalogo Tarifa** | 5.6d? | 2018-06-21 | 2018-06-25 |  |  |  |  | 2018-06-20 | 2018-06-22 | 4.8d? | 77.45d |  |  | 7h |  |
| 21 | 1.1.1.1.6.1 | AN - Requerimientos de Negocio | 1.6d? | 2018-06-21 | 2018-06-21 | 19 |  |  |  | 2018-06-20 | 2018-06-21 | 2.4d? | 77.45d | 0d | Fernando Nava [31.2%] | 2h |  |
| 22 | 1.1.1.1.6.2 | AN - Casos de Uso | 4d? | 2018-06-21 | 2018-06-25 | 21 |  |  |  | 2018-06-21 | 2018-06-22 | 2.4d? | 77.45d | 0d | Fernando Nava [31.2%] | 5h |  |
| 23 | 1.1.1.1.7 | **AN - Catalogo Conceptos de Tarifa** | 5.6d? | 2018-06-25 | 2018-06-28 |  |  |  |  | 2018-06-22 | 2018-06-27 | 4.8d? | 77.45d |  |  | 7h |  |
| 24 | 1.1.1.1.7.1 | AN - Requerimientos de Negocio | 1.6d? | 2018-06-25 | 2018-06-26 | 22 |  |  |  | 2018-06-22 | 2018-06-26 | 2.4d? | 77.45d | 0d | Fernando Nava [31.2%] | 2h |  |
| 25 | 1.1.1.1.7.2 | AN - Casos de Uso | 4d? | 2018-06-26 | 2018-06-28 | 24 |  |  |  | 2018-06-26 | 2018-06-27 | 2.4d? | 77.45d | 0d | Fernando Nava [31.2%] | 5h |  |

| ID | WBS | Task | Duration | Start | Finish | Predecessors | Complete | Remaining | Baseline start | Baseline finish | Baseline duration | Total slack | Free slack | Resources | Work | Actual work |
| --- | --- | --- | --- | --- | --- | --- | --- | --- | --- | --- | --- | --- | --- | --- | --- | --- |
| 26 | 1.1.1.1.8 | **AN - Catalogo Choferes** | 5.6d? | 2018-06-28 | 2018-07-03 |  |  |  | 2018-06-22 | 2018-06-27 | 4.8d? | 77.45d |  |  | 7h |  |
| 27 | 1.1.1.1.8.1 | AN - Requerimientos de Negocio | 1.6d? | 2018-06-28 | 2018-06-29 | 25 |  |  | 2018-06-22 | 2018-06-26 | 2.4d? | 77.45d | 0d | Fernando Nava [31.2%] | 2h |  |
| 28 | 1.1.1.1.8.2 | AN - Casos de Uso | 4d? | 2018-06-29 | 2018-07-03 | 27 |  |  | 2018-06-26 | 2018-06-27 | 2.4d? | 77.45d | 0d | Fernando Nava [31.2%] | 5h |  |
| 29 | 1.1.1.1.9 | **AN - Catalogo Camiones** | 5.6d? | 2018-07-03 | 2018-07-06 |  |  |  | 2018-06-27 | 2018-06-29 | 4.8d? | 77.45d |  |  | 7h |  |
| 30 | 1.1.1.1.9.1 | AN - Requerimientos de Negocio | 1.6d? | 2018-07-03 | 2018-07-04 | 28 |  |  | 2018-06-27 | 2018-06-28 | 2.4d? | 77.45d | 0d | Fernando Nava [31.2%] | 2h |  |
| 31 | 1.1.1.1.9.2 | AN - Casos de Uso | 4d? | 2018-07-04 | 2018-07-06 | 30 |  |  | 2018-06-28 | 2018-06-29 | 2.4d? | 77.45d |  | Fernando Nava [31.2%] | 5h |  |
| 32 | 1.1.1.1.10 | **AN - Catalogo Responsables de Incidencias** | 18.12d? | 2018-05-24 A | 2018-06-06 |  | 32% | 12.32d? | 2018-05-24 | 2018-06-29 | 52.02d? | 2.65d |  |  | 7h | 4h |
| 33 | 1.1.1.1.10.1 | AN - Requerimientos de Negocio | 0.5d? | 2018-05-24 A | 2018-05-24 A | 31 | 100% |  | 2018-05-24 | 2018-06-28 | 2.12d? |  |  | Fernando Nava | 2h | 2h |
| 34 | 1.1.1.1.10.2 | AN - Casos de Uso | 2.62d? | 2018-05-24 A | 2018-06-06 | 33 | 19% | 2.12d? | 2018-05-24 | 2018-06-29 | 2.12d? | 2.65d | 0d | Fernando Nava | 5h | 2h |
| 35 | 1.1.1.1.11 | **AN - Catalogo Tipos de Incidencias** | 5.6d? | 2018-06-06 | 2018-06-08 |  |  |  | 2018-06-29 | 2018-07-03 | 4.8d? | 2.65d |  |  | 7h |  |
| 36 | 1.1.1.1.11.1 | AN - Requerimientos de Negocio | 1.6d? | 2018-06-06 | 2018-06-06 | 34 |  |  | 2018-06-29 | 2018-07-02 | 2.4d? | 2.65d | 0d | Fernando Nava [31.2%] | 2h |  |
| 37 | 1.1.1.1.11.2 | AN - Casos de Uso | 4d? | 2018-06-06 | 2018-06-08 | 36 |  |  | 2018-07-02 | 2018-07-03 | 2.4d? | 2.65d | 0d | Fernando Nava [31.2%] | 5h |  |
| 38 | 1.1.1.1.12 | **AN - Catalogo Tipos de Viaje** | 5.6d? | 2018-06-08 | 2018-06-13 |  |  |  | 2018-06-29 | 2018-07-03 | 4.8d? | 2.65d |  |  | 7h |  |
| 39 | 1.1.1.1.12.1 | AN - Requerimientos de Negocio | 1.6d? | 2018-06-08 | 2018-06-11 | 37 |  |  | 2018-06-29 | 2018-07-02 | 2.4d? | 2.65d | 0d | Fernando Nava [31.2%] | 2h |  |
| 40 | 1.1.1.1.12.2 | AN - Casos de Uso | 4d? | 2018-06-11 | 2018-06-13 | 39 |  |  | 2018-07-02 | 2018-07-03 | 2.4d? | 2.65d | 0d | Fernando Nava [31.2%] | 5h |  |
| 41 | 1.1.1.1.13 | **AN - Catalogo Tipos de Carga/Descarga** | 5.6d? | 2018-06-13 | 2018-06-18 |  |  |  | 2018-07-03 | 2018-07-05 | 4.8d? | 2.65d |  |  | 7h |  |
| 42 | 1.1.1.1.13.1 | AN - Requerimientos de Negocio | 1.6d? | 2018-06-13 | 2018-06-14 | 40 |  |  | 2018-07-03 | 2018-07-04 | 2.4d? | 2.65d | 0d | Fernando Nava [31.2%] | 2h |  |
| 43 | 1.1.1.1.13.2 | AN - Casos de Uso | 4d? | 2018-06-14 | 2018-06-18 | 42 |  |  | 2018-07-04 | 2018-07-05 | 2.4d? | 2.65d | 0d | Fernando Nava [31.2%] | 5h |  |
| 44 | 1.1.1.1.14 | **AN - Catalogo Clientes de Entrega** | 5.6d? | 2018-06-18 | 2018-06-21 |  |  |  | 2018-07-03 | 2018-07-05 | 4.8d? | 2.65d |  |  | 7h |  |
| 45 | 1.1.1.1.14.1 | AN - Requerimientos de Negocio | 1.6d? | 2018-06-18 | 2018-06-19 | 43 |  |  | 2018-07-03 | 2018-07-04 | 2.4d? | 2.65d | 0d | Fernando Nava [31.2%] | 2h |  |
| 46 | 1.1.1.1.14.2 | AN - Casos de Uso | 4d? | 2018-06-19 | 2018-06-21 | 45 |  |  | 2018-07-04 | 2018-07-05 | 2.4d? | 2.65d | 0d | Fernando Nava [31.2%] | 5h |  |
| 47 | 1.1.1.1.15 | **AN - Catalogo Clientes Solicidates** | 5.6d? | 2018-06-21 | 2018-06-26 |  |  |  | 2018-07-03 | 2018-07-05 | 4.8d? | 2.65d |  |  | 7h |  |
| 48 | 1.1.1.1.15.1 | AN - Requerimientos de Negocio | 1.6d? | 2018-06-21 | 2018-06-22 | 46 |  |  | 2018-07-03 | 2018-07-04 | 2.4d? | 2.65d | 0d | Fernando Nava [31.2%] | 2h |  |
| 49 | 1.1.1.1.15.2 | AN - Casos de Uso | 4d? | 2018-06-22 | 2018-06-26 | 48 |  |  | 2018-07-04 | 2018-07-05 | 2.4d? | 2.65d | 0d | Fernando Nava [31.2%] | 5h |  |

| ID | WBS | Task | Duration | Start | Finish | Predecessors | Complete | Remaining | Baseline start | Baseline finish | Baseline duration | Total slack | Free slack | Resources | Work | Actual work | Text1 |
| --- | --- | --- | --- | --- | --- | --- | --- | --- | --- | --- | --- | --- | --- | --- | --- | --- | --- |
| 50 | 1.1.1.2 | **AN - Modulo Seguridad** | 14.4d? | 2018-06-26 | 2018-07-05 |  |  |  | 2018-07-05 | 2018-07-12 | 9.6d? | 2.65d |  |  | 18h |  |  |
| 51 | 1.1.1.2.1 | **AN - Roles** | 4.8d? | 2018-06-26 | 2018-06-28 |  |  |  | 2018-07-05 | 2018-07-10 | 4.8d? | 2.65d |  |  | 6h |  |  |
| 52 | 1.1.1.2.1.1 | AN - Requerimientos de Negocio | 2.4d? | 2018-06-26 | 2018-06-27 | 49 |  |  | 2018-07-05 | 2018-07-09 | 2.4d? | 2.65d | 0d | Fernando Nava [31.2%] | 3h |  |  |
| 53 | 1.1.1.2.1.2 | AN - Casos de Uso | 2.4d? | 2018-06-27 | 2018-06-28 | 52 |  |  | 2018-07-09 | 2018-07-10 | 2.4d? | 2.65d | 0d | Fernando Nava [31.2%] | 3h |  |  |
| 54 | 1.1.1.2.2 | **AN - Configuracion** | 4.8d? | 2018-06-28 | 2018-07-02 |  |  |  | 2018-07-05 | 2018-07-10 | 4.8d? | 2.65d |  |  | 6h |  |  |
| 55 | 1.1.1.2.2.1 | AN - Requerimientos de Negocio | 2.4d? | 2018-06-28 | 2018-06-29 | 53 |  |  | 2018-07-05 | 2018-07-09 | 2.4d? | 2.65d | 0d | Fernando Nava [31.2%] | 3h |  |  |
| 56 | 1.1.1.2.2.2 | AN - Casos de Uso | 2.4d? | 2018-06-29 | 2018-07-02 | 55 |  |  | 2018-07-09 | 2018-07-10 | 2.4d? | 2.65d | 0d | Fernando Nava [31.2%] | 3h |  |  |
| 57 | 1.1.1.2.3 | **AN - Permisos** | 4.8d? | 2018-07-02 | 2018-07-05 |  |  |  | 2018-07-10 | 2018-07-12 | 4.8d? | 2.65d |  |  | 6h |  |  |
| 58 | 1.1.1.2.3.1 | AN - Requerimientos de Negocio | 2.4d? | 2018-07-02 | 2018-07-04 | 56 |  |  | 2018-07-10 | 2018-07-11 | 2.4d? | 2.65d | 0d | Fernando Nava [31.2%] | 3h |  |  |
| 59 | 1.1.1.2.3.2 | AN - Casos de Uso | 2.4d? | 2018-07-04 | 2018-07-05 | 58 |  |  | 2018-07-11 | 2018-07-12 | 2.4d? | 2.65d | 0d | Fernando Nava [31.2%] | 3h |  |  |
| 60 | 1.1.1.3 | **AN - Modulo Alarmas/Reportes/Indicadores de gestión** | 12d? | 2018-07-05 | 2018-07-13 |  |  |  | 2018-07-24 | 2018-07-30 | 8d? | 2.65d |  |  | 18h |  |  |
| 61 | 1.1.1.3.1 | **AN - Alarmas** | 4d? | 2018-07-05 | 2018-07-09 |  |  |  | 2018-07-24 | 2018-07-26 | 4d? | 2.65d |  |  | 6h |  |  |
| 62 | 1.1.1.3.1.1 | AN - Requerimientos de Negocio | 2d? | 2018-07-05 | 2018-07-06 | 59 |  |  | 2018-07-24 | 2018-07-25 | 2d? | 2.65d | 0d | Fernando Nava [37.5%] | 3h |  |  |
| 63 | 1.1.1.3.1.2 | AN - Casos de Uso | 2d? | 2018-07-06 | 2018-07-09 | 62 |  |  | 2018-07-25 | 2018-07-26 | 2d? | 2.65d | 0d | Fernando Nava [37.5%] | 3h |  |  |
| 64 | 1.1.1.3.2 | **AN - Reportes** | 4d? | 2018-07-09 | 2018-07-11 |  |  |  | 2018-07-24 | 2018-07-26 | 4d? | 2.65d |  |  | 6h |  |  |
| 65 | 1.1.1.3.2.1 | AN - Requerimientos de Negocio | 2d? | 2018-07-09 | 2018-07-10 | 63 |  |  | 2018-07-24 | 2018-07-25 | 2d? | 2.65d | 0d | Fernando Nava [37.5%] | 3h |  |  |
| 66 | 1.1.1.3.2.2 | AN - Casos de Uso | 2d? | 2018-07-10 | 2018-07-11 | 65 |  |  | 2018-07-25 | 2018-07-26 | 2d? | 2.65d | 0d | Fernando Nava [37.5%] | 3h |  |  |
| 67 | 1.1.1.3.3 | **AN - Indicadores de gestión** | 4d? | 2018-07-11 | 2018-07-13 |  |  |  | 2018-07-26 | 2018-07-30 | 4d? | 2.65d |  |  | 6h |  |  |
| 68 | 1.1.1.3.3.1 | AN - Requerimientos de Negocio | 2d? | 2018-07-11 | 2018-07-12 | 66 |  |  | 2018-07-26 | 2018-07-27 | 2d? | 2.65d | 0d | Fernando Nava [37.5%] | 3h |  |  |
| 69 | 1.1.1.3.3.2 | AN - Casos de Uso | 2d? | 2018-07-12 | 2018-07-13 | 68 |  |  | 2018-07-27 | 2018-07-30 | 2d? | 2.65d | 2.15d | Fernando Nava [37.5%] | 3h |  |  |
| 70 | 1.1.1.4 | AT - Revisión interna | 2d | 2018-05-28 A | 2018-05-28 A | 69 | 100% |  | 2018-05-28 | 2018-05-28 | 2d |  |  | ITSC [12.5%] | 1h | 1h |  |
| 71 | 1.1.1.5 | AT - Ajustes de comentarios del usuario | 1.33d | 2018-06-05 | 2018-06-05 | 70 |  |  | 2018-05-29 | 2018-05-29 | 2d | 64.36d | 0d | ITSC [12.5%]; cliente | 6h |  |  |
| 72 | 1.1.1.6 | AT - Peer Review y Vo Bo | 0.73d | 2018-06-05 | 2018-06-06 | 71 |  |  | 2018-05-30 | 2018-05-30 | 2d | 64.36d | 0d | ITSC; Omar Santiago | 4h |  |  |
| 73 | 1.1.2 | **AT Analisis de Tecnico** | 80.17d? | 2018-05-24 A | 2018-07-19 |  | 1% | 79.7d? | 2018-05-24 | 2018-08-02 | 101.22d? | 59.82d |  |  | 307.5h | 4h |  |
| 74 | 1.1.2.1 | **IAT - Revisión de documentación entregada por Negocio** | 18.88d? | 2018-06-06 | 2018-06-19 |  |  |  | 2018-05-31 | 2018-06-13 | 18.88d? | 64.36d |  |  | 73.5h |  |  |
| 75 | 1.1.2.1.1 | AT - Requerimientos de Negocio | 2d | 2018-06-06 | 2018-06-07 | 72 |  |  | 2018-05-31 | 2018-05-31 | 2d | 64.36d | 0d | Omar Santiago/Fernando Nava [75%] | 6h |  | 1 Docuemnto de RN |
| 76 | 1.1.2.1.2 | AT - Casos de Uso | 16.88d? | 2018-06-07 | 2018-06-19 | 75 |  |  | 2018-06-01 | 2018-06-13 | 16.88d? | 64.36d | 0d | Omar Santiago/Fernando Nava | 67.5h |  | 27 Documentos de CU |

| ID | WBS | Task | Duration | Start | Finish | Predecessors | Complete | Remaining | Baseline start | Baseline finish | Baseline duration | Total slack | Free slack | Resources | Work | Actual work |
| --- | --- | --- | --- | --- | --- | --- | --- | --- | --- | --- | --- | --- | --- | --- | --- | --- |
| 77 | 1.1.2.2 | **AT - Elaboracion de propuesta de Arquitectura de Solucion** | 14d? | 2018-06-19 | 2018-06-28 |  |  |  | 2018-06-13 | 2018-06-14 | 2d? | 64.36d |  |  | 45h |  |
| 78 | 1.1.2.2.1 | AT - Requerimientos tecnicos | 2d? | 2018-06-19 | 2018-06-20 | 76 |  |  | 2018-06-13 | 2018-06-14 | 2d? | 64.36d | 0d | Omar Santiago [87.5%] | 7h |  |
| 79 | 1.1.2.2.2 | AT - Analisis tecnico | 2d? | 2018-06-20 | 2018-06-21 | 78 |  |  | 2018-06-13 | 2018-06-14 | 2d? | 64.36d | 0d | Omar Santiago [87.5%] | 7h |  |
| 80 | 1.1.2.2.3 | AT - Requerimientos de solucion | 2d? | 2018-06-21 | 2018-06-22 | 79 |  |  | 2018-06-13 | 2018-06-14 | 2d? | 64.36d | 0d | Omar Santiago [87.5%] | 7h |  |
| 81 | 1.1.2.2.4 | AT - Escalabilidad | 2d? | 2018-06-22 | 2018-06-25 | 80 |  |  | 2018-06-13 | 2018-06-14 | 2d? | 64.36d | 0d | Omar Santiago [87.5%] | 7h |  |
| 82 | 1.1.2.2.5 | AT - Modelado BD | 2d? | 2018-06-25 | 2018-06-26 | 81 |  |  | 2018-06-13 | 2018-06-14 | 2d? | 64.36d | 0d | Omar Santiago [87.5%] | 7h |  |
| 83 | 1.1.2.2.6 | AT - Herramientas para solucion | 2d? | 2018-06-26 | 2018-06-27 | 82 |  |  | 2018-06-13 | 2018-06-14 | 2d? | 64.36d | 0d | Omar Santiago [62.5%] | 5h |  |
| 84 | 1.1.2.2.7 | AT - Aplicación responsiva para navegadores web | 2d? | 2018-06-27 | 2018-06-28 | 83 |  |  | 2018-06-13 | 2018-06-14 | 2d? | 64.36d | 0d | Omar Santiago [62.5%] | 5h |  |
| 85 | 1.1.2.3 | AT - Peer Review y Vo Bo Arquitectura de Solucion | 4d | 2018-06-28 | 2018-07-02 | 84 |  |  | 2018-06-14 | 2018-06-15 | 2d | 64.36d | 0d | Omar Santiago [25%] | 4h |  |
| 86 | 1.1.2.4 | **AT - Elaboración de documentos AT** | 75.64d? | 2018-05-24 A | 2018-07-16 |  | 1% | 75.03d? | 2018-05-24 | 2018-07-30 | 95.22d? | 64.36d |  |  | 173h | 4h |
| 87 | 1.1.2.4.1 | **AT - Modulo Catalogos Maestros** | 75.64d? | 2018-05-24 A | 2018-07-16 |  | 1% | 74.5d? | 2018-05-24 | 2018-07-05 | 61.62d? | 64.36d |  |  | 90h | 4h |
| 88 | 1.1.2.4.1.1 | **AT - Catalogo Rol** | 4.8d | 2018-07-02 | 2018-07-04 |  |  |  | 2018-06-15 | 2018-06-19 | 4.8d | 80.26d |  |  | 6h |  |
| 89 | 1.1.2.4.1.1.1 | AT - Elaboración Bocetos de Archivos | 1.6d | 2018-07-02 | 2018-07-03 | 85 |  |  | 2018-06-15 | 2018-06-18 | 2.4d | 80.26d | 0d | Fernando Nava [31.2%] | 2h |  |
| 90 | 1.1.2.4.1.1.2 | AT - Elaboración Bocetos de Pantallas | 3.2d | 2018-07-03 | 2018-07-04 | 89 |  |  | 2018-06-18 | 2018-06-19 | 2.4d | 80.26d |  | Fernando Nava [31.2%] | 4h |  |
| 91 | 1.1.2.4.1.2 | **AT - Catalogo Actores** | 1.5d? | 2018-07-02 | 2018-07-03 |  |  |  | 2018-06-15 | 2018-06-18 | 1.5d? | 64.36d |  |  | 6h |  |
| 92 | 1.1.2.4.1.2.1 | AT - Elaboración Bocetos de Archivos | 0.5d? | 2018-07-02 | 2018-07-02 | 85 |  |  | 2018-06-15 | 2018-06-15 | 0.75d? | 64.36d | 0d | Fernando Nava | 2h |  |
| 93 | 1.1.2.4.1.2.2 | AT - Elaboración Bocetos de Pantallas | 1d? | 2018-07-02 | 2018-07-03 | 92 |  |  | 2018-06-15 | 2018-06-18 | 0.75d? | 64.36d | 0d | Fernando Nava | 4h |  |
| 94 | 1.1.2.4.1.3 | **AT - Catalogo Actores-Roles** | 4.8d? | 2018-07-03 | 2018-07-05 |  |  |  | 2018-06-18 | 2018-06-20 | 4.8d? | 78.76d |  |  | 6h |  |
| 95 | 1.1.2.4.1.3.1 | AT - Elaboración Bocetos de Archivos | 1.6d? | 2018-07-03 | 2018-07-04 | 93 |  |  | 2018-06-18 | 2018-06-19 | 2.4d? | 78.76d | 0d | Fernando Nava [31.2%] | 2h |  |
| 96 | 1.1.2.4.1.3.2 | AT - Elaboración Bocetos de Pantallas | 3.2d? | 2018-07-04 | 2018-07-05 | 95 |  |  | 2018-06-19 | 2018-06-20 | 2.4d? | 78.76d |  | Fernando Nava [31.2%] | 4h |  |
| 97 | 1.1.2.4.1.4 | **AT - Catalogo Contratos** | 4.8d? | 2018-07-03 | 2018-07-05 |  |  |  | 2018-06-18 | 2018-06-20 | 4.8d? | 64.36d |  |  | 6h |  |
| 98 | 1.1.2.4.1.4.1 | AT - Elaboración Bocetos de Archivos | 1.6d? | 2018-07-03 | 2018-07-04 | 93 |  |  | 2018-06-18 | 2018-06-19 | 2.4d? | 64.36d | 0d | Fernando Nava [31.2%] | 2h |  |
| 99 | 1.1.2.4.1.4.2 | AT - Elaboración Bocetos de Pantallas | 3.2d? | 2018-07-04 | 2018-07-05 | 98 |  |  | 2018-06-19 | 2018-06-20 | 2.4d? | 64.36d | 0d | Fernando Nava [31.2%] | 4h |  |
| 100 | 1.1.2.4.1.5 | **AT - Catalogo Tipos de Tarifa** | 4.8d? | 2018-07-05 | 2018-07-10 |  |  |  | 2018-06-20 | 2018-06-22 | 4.8d? | 73.96d |  |  | 6h |  |
| 101 | 1.1.2.4.1.5.1 | AT - Elaboración Bocetos de Archivos | 1.6d? | 2018-07-05 | 2018-07-06 | 99 |  |  | 2018-06-20 | 2018-06-21 | 2.4d? | 73.96d | 0d | Fernando Nava [31.2%] | 2h |  |
| 102 | 1.1.2.4.1.5.2 | AT - Elaboración Bocetos de Pantallas | 3.2d? | 2018-07-06 | 2018-07-10 | 101 |  |  | 2018-06-21 | 2018-06-22 | 2.4d? | 73.96d |  | Fernando Nava [31.2%] | 4h |  |

| ID | WBS | Task | Duration | Start | Finish | Predecessors | Complete | Remaining | Baseline start | Baseline finish | Baseline duration | Total slack | Free slack | Resources | Work | Actual work |
| --- | --- | --- | --- | --- | --- | --- | --- | --- | --- | --- | --- | --- | --- | --- | --- | --- |
| 103 | 1.1.2.4.1.6 | **AT - Catalogo Tarifa** | 4.8d? | 2018-07-05 | 2018-07-10 |  |  |  | 2018-06-20 | 2018-06-22 | 4.8d? | 64.36d |  |  | 6h |  |
| 104 | 1.1.2.4.1.6.1 | AT - Elaboración Bocetos de Archivos | 1.6d? | 2018-07-05 | 2018-07-06 | 99 |  |  | 2018-06-20 | 2018-06-21 | 2.4d? | 64.36d | 0d | Fernando Nava [31.2%] | 2h |  |
| 105 | 1.1.2.4.1.6.2 | AT - Elaboración Bocetos de Pantallas | 3.2d? | 2018-07-06 | 2018-07-10 | 104 |  |  | 2018-06-21 | 2018-06-22 | 2.4d? | 64.36d | 0d | Fernando Nava [31.2%] | 4h |  |
| 106 | 1.1.2.4.1.7 | **AT - Catalogo Conceptos de Tarifa** | 4.8d? | 2018-07-10 | 2018-07-12 |  |  |  | 2018-06-22 | 2018-06-27 | 4.8d? | 64.36d |  |  | 6h |  |
| 107 | 1.1.2.4.1.7.1 | AT - Elaboración Bocetos de Archivos | 1.6d? | 2018-07-10 | 2018-07-10 | 105 |  |  | 2018-06-22 | 2018-06-26 | 2.4d? | 64.36d | 0d | Fernando Nava [31.2%] | 2h |  |
| 108 | 1.1.2.4.1.7.2 | AT - Elaboración Bocetos de Pantallas | 3.2d? | 2018-07-10 | 2018-07-12 | 107 |  |  | 2018-06-26 | 2018-06-27 | 2.4d? | 69.16d |  | Fernando Nava [31.2%] | 4h |  |
| 109 | 1.1.2.4.1.8 | **AT - Catalogo Choferes** | 4.8d? | 2018-07-10 | 2018-07-12 |  |  |  | 2018-06-22 | 2018-06-27 | 4.8d? | 65.96d |  |  | 6h |  |
| 110 | 1.1.2.4.1.8.1 | AT - Elaboración Bocetos de Archivos | 1.6d? | 2018-07-10 | 2018-07-10 | 105 |  |  | 2018-06-22 | 2018-06-26 | 2.4d? | 72.36d |  | Fernando Nava [31.2%] | 2h |  |
| 111 | 1.1.2.4.1.8.2 | AT - Elaboración Bocetos de Pantallas | 3.2d? | 2018-07-10 | 2018-07-12 | 107 |  |  | 2018-06-26 | 2018-06-27 | 2.4d? | 64.36d | 0d | Fernando Nava [31.2%] | 4h |  |
| 112 | 1.1.2.4.1.9 | **AT - Catalogo Camiones** | 4.8d? | 2018-07-12 | 2018-07-16 |  |  |  | 2018-06-27 | 2018-06-29 | 4.8d? | 64.36d |  |  | 6h |  |
| 113 | 1.1.2.4.1.9.1 | AT - Elaboración Bocetos de Archivos | 1.6d? | 2018-07-12 | 2018-07-13 | 111 |  |  | 2018-06-27 | 2018-06-28 | 2.4d? | 64.36d | 0d | Fernando Nava [31.2%] | 2h |  |
| 114 | 1.1.2.4.1.9.2 | AT - Elaboración Bocetos de Pantallas | 3.2d? | 2018-07-13 | 2018-07-16 | 113 |  |  | 2018-06-28 | 2018-06-29 | 2.4d? | 64.36d |  | Fernando Nava [31.2%] | 4h |  |
| 115 | 1.1.2.4.1.10 | **AT - Catalogo Responsables de Incidencias** | 17.88d? | 2018-05-24 A | 2018-06-05 |  | 35% | 11.66d? | 2018-05-24 | 2018-06-29 | 52.02d? | 0.5d |  |  | 6h | 4h |
| 116 | 1.1.2.4.1.10.1 | AT - Elaboración Bocetos de Archivos | 0.5d? | 2018-05-24 A | 2018-05-24 A | 111 | 100% |  | 2018-05-24 | 2018-06-28 | 2.12d? |  |  | Fernando Nava | 2h | 2h |
| 117 | 1.1.2.4.1.10.2 | AT - Elaboración Bocetos de Pantallas | 2.38d? | 2018-05-24 A | 2018-06-05 | 116 | 21% | 1.88d? | 2018-05-24 | 2018-06-29 | 2.12d? | 0.5d | 0d | Fernando Nava | 4h | 2h |
| 118 | 1.1.2.4.1.11 | **AT - Catalogo Tipos de Incidencias** | 4.8d? | 2018-06-05 | 2018-06-08 |  |  |  | 2018-06-29 | 2018-07-03 | 4.8d? | 117.32d |  |  | 6h |  |
| 119 | 1.1.2.4.1.11.1 | AT - Elaboración Bocetos de Archivos | 1.6d? | 2018-06-05 | 2018-06-06 | 117 |  |  | 2018-06-29 | 2018-07-02 | 2.4d? | 117.32d | 0d | Fernando Nava [31.2%] | 2h |  |
| 120 | 1.1.2.4.1.11.2 | AT - Elaboración Bocetos de Pantallas | 3.2d? | 2018-06-06 | 2018-06-08 | 119 |  |  | 2018-07-02 | 2018-07-03 | 2.4d? | 117.32d |  | Fernando Nava [31.2%] | 4h |  |
| 121 | 1.1.2.4.1.12 | **AT - Catalogo Tipos de Viaje** | 4.8d? | 2018-06-05 | 2018-06-08 |  |  |  | 2018-06-29 | 2018-07-03 | 4.8d? | 0.5d | 0d |  | 6h |  |
| 122 | 1.1.2.4.1.12.1 | AT - Elaboración Bocetos de Archivos | 1.6d? | 2018-06-05 | 2018-06-06 | 117 |  |  | 2018-06-29 | 2018-07-02 | 2.4d? | 0.5d | 0d | Fernando Nava [31.2%] | 2h |  |
| 123 | 1.1.2.4.1.12.2 | AT - Elaboración Bocetos de Pantallas | 3.2d? | 2018-06-06 | 2018-06-08 | 122 |  |  | 2018-07-02 | 2018-07-03 | 2.4d? | 0.5d | 0d | Fernando Nava [31.2%] | 4h |  |
| 124 | 1.1.2.4.1.13 | **AT - Catalogo Tipos de Carga/Descarga** | 4.8d? | 2018-06-08 | 2018-06-12 |  |  |  | 2018-07-03 | 2018-07-05 | 4.8d? | 112.52d |  |  | 6h |  |
| 125 | 1.1.2.4.1.13.1 | AT - Elaboración Bocetos de Archivos | 1.6d? | 2018-06-08 | 2018-06-11 | 123 |  |  | 2018-07-03 | 2018-07-04 | 2.4d? | 112.52d | 0d | Fernando Nava [31.2%] | 2h |  |
| 126 | 1.1.2.4.1.13.2 | AT - Elaboración Bocetos de Pantallas | 3.2d? | 2018-06-11 | 2018-06-12 | 125 |  |  | 2018-07-04 | 2018-07-05 | 2.4d? | 112.52d |  | Fernando Nava [31.2%] | 4h |  |

| ID | WBS | Task | Duration | Start | Finish | Predecessors | Baseline start | Baseline finish | Baseline duration | Total slack | Free slack | Resources | Work |
| --- | --- | --- | --- | --- | --- | --- | --- | --- | --- | --- | --- | --- | --- |
| 127 | 1.1.2.4.1.14 | **AT - Catalogo Clientes de Entrega** | 4.8d? | 2018-06-08 | 2018-06-12 |  | 2018-07-03 | 2018-07-05 | 4.8d? | 112.52d |  |  | 6h |
| 128 | 1.1.2.4.1.14.1 | AT - Elaboración Bocetos de Archivos | 1.6d? | 2018-06-08 | 2018-06-11 | 123 | 2018-07-03 | 2018-07-04 | 2.4d? | 112.52d | 0d | Fernando Nava [31.2%] | 2h |
| 129 | 1.1.2.4.1.14.2 | AT - Elaboración Bocetos de Pantallas | 3.2d? | 2018-06-11 | 2018-06-12 | 128 | 2018-07-04 | 2018-07-05 | 2.4d? | 112.52d |  | Fernando Nava [31.2%] | 4h |
| 130 | 1.1.2.4.1.15 | **AT - Catalogo Clientes Solicidates** | 4.8d? | 2018-06-08 | 2018-06-12 |  | 2018-07-03 | 2018-07-05 | 4.8d? | 0.5d |  |  | 6h |
| 131 | 1.1.2.4.1.15.1 | AT - Elaboración Bocetos de Archivos | 1.6d? | 2018-06-08 | 2018-06-11 | 123 | 2018-07-03 | 2018-07-04 | 2.4d? | 0.5d | 0d | Fernando Nava [31.2%] | 2h |
| 132 | 1.1.2.4.1.15.2 | AT - Elaboración Bocetos de Pantallas | 3.2d? | 2018-06-11 | 2018-06-12 | 131 | 2018-07-04 | 2018-07-05 | 2.4d? | 0.5d | 0d | Fernando Nava [31.2%] | 4h |
| 133 | 1.1.2.4.2 | **AT - Modulo Seguridad** | 11.2d? | 2018-06-12 | 2018-06-20 |  | 2018-07-05 | 2018-07-12 | 9.6d? | 0.5d |  |  | 22h |
| 134 | 1.1.2.4.2.1 | **AT - Roles** | 6.4d? | 2018-06-12 | 2018-06-15 |  | 2018-07-05 | 2018-07-10 | 4.8d? | 106.12d |  |  | 8h |
| 135 | 1.1.2.4.2.1.1 | AT - Elaboración Bocetos de Archivos | 2.4d? | 2018-06-12 | 2018-06-13 | 132 | 2018-07-05 | 2018-07-09 | 2.4d? | 106.12d | 0d | Fernando Nava [31.2%] | 3h |
| 136 | 1.1.2.4.2.1.2 | AT - Elaboración Bocetos de Pantallas | 4d? | 2018-06-13 | 2018-06-15 | 135 | 2018-07-09 | 2018-07-10 | 2.4d? | 106.12d |  | Fernando Nava [31.2%] | 5h |
| 137 | 1.1.2.4.2.2 | **AT - Configuracion** | 6.4d? | 2018-06-12 | 2018-06-15 |  | 2018-07-05 | 2018-07-10 | 4.8d? | 0.5d |  |  | 8h |
| 138 | 1.1.2.4.2.2.1 | AT - Elaboración Bocetos de Archivos | 2.4d? | 2018-06-12 | 2018-06-13 | 132 | 2018-07-05 | 2018-07-09 | 2.4d? | 0.5d | 0d | Fernando Nava [31.2%] | 3h |
| 139 | 1.1.2.4.2.2.2 | AT - Elaboración Bocetos de Pantallas | 4d? | 2018-06-13 | 2018-06-15 | 138 | 2018-07-09 | 2018-07-10 | 2.4d? | 0.5d | 0d | Fernando Nava [31.2%] | 5h |
| 140 | 1.1.2.4.2.3 | **AT - Permisos** | 4.8d? | 2018-06-15 | 2018-06-20 |  | 2018-07-10 | 2018-07-12 | 4.8d? | 0.5d |  |  | 6h |
| 141 | 1.1.2.4.2.3.1 | AT - Elaboración Bocetos de Archivos | 2.4d? | 2018-06-15 | 2018-06-19 | 139 | 2018-07-10 | 2018-07-11 | 2.4d? | 0.5d | 0d | Fernando Nava [31.2%] | 3h |
| 142 | 1.1.2.4.2.3.2 | AT - Elaboración Bocetos de Pantallas | 2.4d? | 2018-06-19 | 2018-06-20 | 141 | 2018-07-11 | 2018-07-12 | 2.4d? | 0.5d | 0d | Fernando Nava [31.2%] | 3h |
| 143 | 1.1.2.4.3 | **AT - Modulo Solicitudes** | 26.67d? | 2018-06-20 | 2018-07-09 |  | 2018-07-12 | 2018-07-24 | 16d? | 0.5d |  |  | 40h |
| 144 | 1.1.2.4.3.1 | **AT - Cliente - Solicitud de Transporte** | 5.33d? | 2018-06-20 | 2018-06-25 |  | 2018-07-12 | 2018-07-17 | 5.33d? | 0.5d |  |  | 8h |
| 145 | 1.1.2.4.3.1.1 | AT - Elaboración Bocetos de Archivos | 2d? | 2018-06-20 | 2018-06-21 | 142 | 2018-07-12 | 2018-07-13 | 2.67d? | 0.5d | 0d | Fernando Nava [37.5%] | 3h |
| 146 | 1.1.2.4.3.1.2 | AT - Elaboración Bocetos de Pantallas | 3.33d? | 2018-06-21 | 2018-06-25 | 145 | 2018-07-13 | 2018-07-17 | 2.67d? | 0.5d | 0d | Fernando Nava [37.5%] | 5h |
| 147 | 1.1.2.4.3.2 | **AT - Trafico - Valoracion del Viaje** | 5.33d? | 2018-06-25 | 2018-06-27 |  | 2018-07-12 | 2018-07-17 | 5.33d? | 0.5d |  |  | 8h |
| 148 | 1.1.2.4.3.2.1 | AT - Elaboración Bocetos de Archivos | 2d? | 2018-06-25 | 2018-06-26 | 146 | 2018-07-12 | 2018-07-13 | 2.67d? | 0.5d | 0d | Fernando Nava [37.5%] | 3h |
| 149 | 1.1.2.4.3.2.2 | AT - Elaboración Bocetos de Pantallas | 3.33d? | 2018-06-26 | 2018-06-27 | 148 | 2018-07-13 | 2018-07-17 | 2.67d? | 0.5d | 0d | Fernando Nava [37.5%] | 5h |
| 150 | 1.1.2.4.3.3 | **AT - Distribucion - Asugnacion de Unidad y Carga** | 5.33d? | 2018-06-27 | 2018-07-02 |  | 2018-07-17 | 2018-07-19 | 5.33d? | 0.5d |  |  | 8h |
| 151 | 1.1.2.4.3.3.1 | AT - Elaboración Bocetos de Archivos | 2d? | 2018-06-27 | 2018-06-28 | 149 | 2018-07-17 | 2018-07-18 | 2.67d? | 0.5d | 0d | Fernando Nava [37.5%] | 3h |
| 152 | 1.1.2.4.3.3.2 | AT - Elaboración Bocetos de Pantallas | 3.33d? | 2018-06-28 | 2018-07-02 | 151 | 2018-07-18 | 2018-07-19 | 2.67d? | 0.5d | 0d | Fernando Nava [37.5%] | 5h |

| ID | WBS | Task | Duration | Start | Finish | Predecessors | Baseline start | Baseline finish | Baseline duration | Total slack | Free slack | Resources | Work |
| --- | --- | --- | --- | --- | --- | --- | --- | --- | --- | --- | --- | --- | --- |
| 153 | 1.1.2.4.3.4 | **AT - Operador CL - Operación y Descarga** | 5.33d? | 2018-07-02 | 2018-07-05 |  | 2018-07-17 | 2018-07-19 | 5.33d? | 0.5d |  |  | 8h |
| 154 | 1.1.2.4.3.4.1 | AT - Elaboración Bocetos de Archivos | 2d? | 2018-07-02 | 2018-07-03 | 152 | 2018-07-17 | 2018-07-18 | 2.67d? | 0.5d | 0d | Fernando Nava [37.5%] | 3h |
| 155 | 1.1.2.4.3.4.2 | AT - Elaboración Bocetos de Pantallas | 3.33d? | 2018-07-03 | 2018-07-05 | 154 | 2018-07-18 | 2018-07-19 | 2.67d? | 0.5d | 0d | Fernando Nava [37.5%] | 5h |
| 156 | 1.1.2.4.3.5 | **AT - Distribucion - Cierre del Viaje y Facturacion** | 5.33d? | 2018-07-05 | 2018-07-09 |  | 2018-07-19 | 2018-07-24 | 5.33d? | 0.5d |  |  | 8h |
| 157 | 1.1.2.4.3.5.1 | AT - Elaboración Bocetos de Archivos | 2d? | 2018-07-05 | 2018-07-06 | 155 | 2018-07-19 | 2018-07-23 | 2.67d? | 0.5d | 0d | Fernando Nava [37.5%] | 3h |
| 158 | 1.1.2.4.3.5.2 | AT - Elaboración Bocetos de Pantallas | 3.33d? | 2018-07-06 | 2018-07-09 | 157 | 2018-07-23 | 2018-07-24 | 2.67d? | 0.5d | 0d | Fernando Nava [37.5%] | 5h |
| 159 | 1.1.2.4.4 | **AT - Modulo Alarmas/Reportes/Indicadores de gestión** | 9.33d? | 2018-07-09 | 2018-07-16 |  | 2018-07-24 | 2018-07-30 | 8d? | 0.5d |  |  | 21h |
| 160 | 1.1.2.4.4.1 | **AT - Alarmas** | 4.67d? | 2018-07-09 | 2018-07-12 |  | 2018-07-24 | 2018-07-26 | 4d? | 69.99d |  |  | 7h |
| 161 | 1.1.2.4.4.1.1 | AT - Elaboración Bocetos de Archivos | 2.67d? | 2018-07-09 | 2018-07-11 | 158 | 2018-07-24 | 2018-07-25 | 2d? | 69.99d | 0d | Fernando Nava [37.5%] | 4h |
| 162 | 1.1.2.4.4.1.2 | AT - Elaboración Bocetos de Pantallas | 2d? | 2018-07-11 | 2018-07-12 | 161 | 2018-07-25 | 2018-07-26 | 2d? | 69.99d |  | Fernando Nava [37.5%] | 3h |
| 163 | 1.1.2.4.4.2 | **AT - Reportes** | 4.67d? | 2018-07-09 | 2018-07-12 |  | 2018-07-24 | 2018-07-26 | 4d? | 0.5d |  |  | 7h |
| 164 | 1.1.2.4.4.2.1 | AT - Elaboración Bocetos de Archivos | 2.67d? | 2018-07-09 | 2018-07-11 | 158 | 2018-07-24 | 2018-07-25 | 2d? | 0.5d | 0d | Fernando Nava [37.5%] | 4h |
| 165 | 1.1.2.4.4.2.2 | AT - Elaboración Bocetos de Pantallas | 2d? | 2018-07-11 | 2018-07-12 | 164 | 2018-07-25 | 2018-07-26 | 2d? | 0.5d | 0d | Fernando Nava [37.5%] | 3h |
| 166 | 1.1.2.4.4.3 | **AT - Indicadores de gestión** | 4.67d? | 2018-07-12 | 2018-07-16 |  | 2018-07-26 | 2018-07-30 | 4d? | 0.5d |  |  | 7h |
| 167 | 1.1.2.4.4.3.1 | AT - Elaboración Bocetos de Archivos | 2.67d? | 2018-07-12 | 2018-07-13 | 165 | 2018-07-26 | 2018-07-27 | 2d? | 0.5d | 0d | Fernando Nava [37.5%] | 4h |
| 168 | 1.1.2.4.4.3.2 | AT - Elaboración Bocetos de Pantallas | 2d? | 2018-07-13 | 2018-07-16 | 167 | 2018-07-27 | 2018-07-30 | 2d? | 0.5d | 0d | Fernando Nava [37.5%] | 3h |
| 169 | 1.1.2.5 | AT - Revisión con el usuario | 1d? | 2018-07-16 | 2018-07-16 | 142, 158, 168, 59, 69 | 2018-07-30 | 2018-07-31 | 2d? | 0.5d | 0d | Omar Santiago/Fernando Nava/ITSC | 4h |
| 170 | 1.1.2.6 | AT - Ajustes de comentarios del usuario | 4d? | 2018-07-16 | 2018-07-18 | 169 | 2018-07-31 | 2018-08-01 | 2d? | 0.5d | 0d | Omar Santiago/Fernando Nava [37.5%] | 6h |
| 171 | 1.1.2.7 | AT - Peer Review y Vo Bo | 0.5d? | 2018-07-18 | 2018-07-19 | 170 | 2018-08-01 | 2018-08-02 | 2d? | 0.5d | 0d | Omar Santiago/Fernando Nava/ITSC | 2h |
| 172 | 1.2 | Validacion de documentacion, ultimos ajustes | 2d? | 2018-07-19 | 2018-07-20 | 171 | 2018-08-02 | 2018-08-03 | 2d? | 0.5d | 0d | Omar Santiago/Fernando Nava [75%] | 6h |
| 173 | 1.3 | **CC_Desarrollo** | 116.82d? | 2018-06-08 | 2018-08-29 |  | 2018-06-15 | 2018-08-21 | 93.35d? | 0.5d |  |  | 313h |
| 174 | 1.3.1 | **Diseño y Construcción** | 116.82d? | 2018-06-08 | 2018-08-29 |  | 2018-06-15 | 2018-08-20 | 91.35d? | 0.5d |  |  | 311h |
| 175 | 1.3.1.1 | CC - Revision del documento de Arquitectura de Solucion | 2d? | 2018-07-02 | 2018-07-03 | 85 | 2018-06-15 | 2018-06-18 | 2d? | 73.73d | 0d | Omar Santiago [37.5%] | 3h |
| 176 | 1.3.1.2 | **CC - Instalacion y Configuracion** | 9.33d? | 2018-07-03 | 2018-07-10 |  | 2018-06-18 | 2018-06-25 | 9.33d? | 73.73d |  |  | 23h |
| 177 | 1.3.1.2.1 | CC - Instalacion de herramientas de desarrollo | 6d? | 2018-07-03 | 2018-07-06 | 175 | 2018-06-18 | 2018-06-21 | 6d? | 77.06d |  | Omar Santiago [37.5%] | 9h |
| 178 | 1.3.1.2.2 | CC - Instalacion de herramientas de gestion de Bases de Datos | 6d? | 2018-07-03 | 2018-07-06 | 175 | 2018-06-18 | 2018-06-21 | 6d? | 73.73d | 0d | Omar Santiago [37.5%] | 9h |
| 179 | 1.3.1.2.3 | CC - Instalacion de herramienta para soportar aplicaciones web | 3.33d? | 2018-07-06 | 2018-07-10 | 178 | 2018-06-21 | 2018-06-25 | 3.33d? | 73.73d |  | Omar Santiago [37.5%] | 5h |

| ID | WBS | Task | Duration | Start | Finish | Predecessors | Baseline start | Baseline finish | Baseline duration | Total slack | Free slack | Resources | Work |
| --- | --- | --- | --- | --- | --- | --- | --- | --- | --- | --- | --- | --- | --- |
| 180 | 1.3.1.3 | **CC - Desarrollo** | 116.82d? | 2018-06-08 | 2018-08-29 |  | 2018-06-18 | 2018-07-31 | 62.85d? | 0.5d |  |  | 153h |
| 181 | 1.3.1.3.1 | **CC - Modulo Catalogos Maestros** | 30d? | 2018-07-20 | 2018-08-10 |  | 2018-06-18 | 2018-07-06 | 29.25d? | 0.5d |  |  | 60h |
| 182 | 1.3.1.3.1.1 | CC - Catalogo Rol | 2d? | 2018-07-20 | 2018-07-23 | 172 | 2018-06-19 | 2018-06-20 | 2d? | 0.5d | 0d | Omar Santiago [50%] | 4h |
| 183 | 1.3.1.3.1.2 | CC - Catalogo Actores | 2d? | 2018-07-23 | 2018-07-24 | 182 | 2018-06-18 | 2018-06-19 | 2d? | 0.5d | 0d | Omar Santiago [50%] | 4h |
| 184 | 1.3.1.3.1.3 | CC - Catalogo Actores-Roles | 2d? | 2018-07-24 | 2018-07-25 | 183 | 2018-06-20 | 2018-06-21 | 2d? | 0.5d | 0d | Omar Santiago [50%] | 4h |
| 185 | 1.3.1.3.1.4 | CC - Catalogo Contratos | 2d? | 2018-07-25 | 2018-07-26 | 184 | 2018-06-20 | 2018-06-21 | 2d? | 0.5d | 0d | Omar Santiago [50%] | 4h |
| 186 | 1.3.1.3.1.5 | CC - Catalogo Tipos de Tarifa | 2d? | 2018-07-26 | 2018-07-27 | 185 | 2018-06-22 | 2018-06-25 | 2d? | 0.5d | 0d | Omar Santiago [50%] | 4h |
| 187 | 1.3.1.3.1.6 | CC - Catalogo Tarifa | 2d? | 2018-07-27 | 2018-07-30 | 186 | 2018-06-22 | 2018-06-25 | 2d? | 0.5d | 0d | Omar Santiago [50%] | 4h |
| 188 | 1.3.1.3.1.7 | CC - Catalogo Conceptos de Tarifa | 2d? | 2018-07-30 | 2018-07-31 | 187 | 2018-06-27 | 2018-06-28 | 2d? | 0.5d | 0d | Omar Santiago [50%] | 4h |
| 189 | 1.3.1.3.1.8 | CC - Catalogo Choferes | 2d? | 2018-07-31 | 2018-08-01 | 188 | 2018-06-27 | 2018-06-28 | 2d? | 0.5d | 0d | Omar Santiago [50%] | 4h |
| 190 | 1.3.1.3.1.9 | CC - Catalogo Camiones | 2d? | 2018-08-01 | 2018-08-02 | 189 | 2018-06-29 | 2018-07-02 | 2d? | 0.5d | 0d | Omar Santiago [50%] | 4h |
| 191 | 1.3.1.3.1.10 | CC - Catalogo Responsables de Incidencias | 2d? | 2018-08-02 | 2018-08-03 | 190 | 2018-06-29 | 2018-07-02 | 2d? | 0.5d | 0d | Omar Santiago [50%] | 4h |
| 192 | 1.3.1.3.1.11 | CC - Catalogo Tipos de Incidencias | 2d? | 2018-08-03 | 2018-08-06 | 191 | 2018-07-03 | 2018-07-04 | 2d? | 0.5d | 0d | Omar Santiago [50%] | 4h |
| 193 | 1.3.1.3.1.12 | CC - Catalogo Tipos de Viaje | 2d? | 2018-08-06 | 2018-08-07 | 192 | 2018-07-03 | 2018-07-04 | 2d? | 0.5d | 0d | Omar Santiago [50%] | 4h |
| 194 | 1.3.1.3.1.13 | CC - Catalogo Tipos de Carga/Descarga | 2d? | 2018-08-07 | 2018-08-08 | 193 | 2018-07-05 | 2018-07-06 | 2d? | 0.5d | 0d | Omar Santiago [50%] | 4h |
| 195 | 1.3.1.3.1.14 | CC - Catalogo Clientes de Entrega | 2d? | 2018-08-08 | 2018-08-09 | 194 | 2018-07-05 | 2018-07-06 | 2d? | 0.5d | 0d | Omar Santiago [50%] | 4h |
| 196 | 1.3.1.3.1.15 | CC - Catalogo Clientes Solicidates | 2d? | 2018-08-09 | 2018-08-10 | 195 | 2018-07-05 | 2018-07-06 | 2d? | 0.5d | 0d | Omar Santiago [50%] | 4h |
| 197 | 1.3.1.3.2 | **CC - Modulo Seguridad** | 11d? | 2018-08-10 | 2018-08-17 |  | 2018-07-10 | 2018-07-16 | 8.8d? | 0.5d |  |  | 22h |
| 198 | 1.3.1.3.2.1 | CC - Roles | 3.5d? | 2018-08-10 | 2018-08-13 | 196 | 2018-07-10 | 2018-07-11 | 3.5d? | 0.5d | 0d | Omar Santiago [50%] | 7h |
| 199 | 1.3.1.3.2.2 | CC - Configuracion | 3.5d? | 2018-08-13 | 2018-08-15 | 198 | 2018-07-10 | 2018-07-11 | 3.5d? | 0.5d | 0d | Omar Santiago [50%] | 7h |
| 200 | 1.3.1.3.2.3 | CC - Permisos | 4d? | 2018-08-15 | 2018-08-17 | 199 | 2018-07-12 | 2018-07-16 | 4d? | 0.5d | 0d | Omar Santiago [50%] | 8h |
| 201 | 1.3.1.3.3 | **CC - Modulo Solicitudes** | 16.32d? | 2018-08-17 | 2018-08-29 |  | 2018-07-17 | 2018-07-30 | 18.99d? | 0.5d |  |  | 53h |
| 202 | 1.3.1.3.3.1 | CC - Cliente - Solicitud de Transporte | 2d? | 2018-08-17 | 2018-08-20 | 200 | 2018-07-17 | 2018-07-18 | 2d? | 0.5d | 0d | Omar Santiago [87.5%] | 7h |
| 203 | 1.3.1.3.3.2 | CC - Trafico - Valoracion del Viaje | 2d? | 2018-08-20 | 2018-08-21 | 202 | 2018-07-17 | 2018-07-18 | 2d? | 0.5d | 0d | Omar Santiago [87.5%] | 7h |
| 204 | 1.3.1.3.3.3 | CC - Distribucion - Asugnacion de Unidad y Carga | 2d? | 2018-08-21 | 2018-08-22 | 203 | 2018-07-19 | 2018-07-20 | 2d? | 0.5d | 0d | Omar Santiago [87.5%] | 7h |
| 205 | 1.3.1.3.3.4 | CC - Operador CL - Operación y Descarga | 2d? | 2018-08-22 | 2018-08-23 | 204 | 2018-07-19 | 2018-07-20 | 2d? | 0.5d | 0d | Omar Santiago [87.5%] | 7h |
| 206 | 1.3.1.3.3.5 | CC - Distribucion - Cierre del Viaje y Facturacion | 2d? | 2018-08-23 | 2018-08-24 | 205 | 2018-07-24 | 2018-07-25 | 2d? | 0.5d | 0d | Omar Santiago [87.5%] | 7h |

| ID | WBS | Task | Duration | Start | Finish | Predecessors | Baseline start | Baseline finish | Baseline duration | Total slack | Free slack | Resources | Work |
| --- | --- | --- | --- | --- | --- | --- | --- | --- | --- | --- | --- | --- | --- |
| 207 | 1.3.1.3.3.6 | **CC - Primer Check point operativo** | 4d? | 2018-08-24 | 2018-08-28 |  | 2018-07-25 | 2018-07-27 | 4d? | 0.5d |  |  | 9h |
| 208 | 1.3.1.3.3.6.1 | CC - Primer Check point operativo | 2d? | 2018-08-24 | 2018-08-27 | 206 | 2018-07-25 | 2018-07-26 | 2d? | 0.5d | 0d | Omar Santiago/ITSC [25%] | 2h |
| 209 | 1.3.1.3.3.6.2 | CC - Actualizacion de los puntos del primer Ckeckpoint | 2d? | 2018-08-27 | 2018-08-28 | 208 | 2018-07-26 | 2018-07-27 | 2d? | 0.5d | 0d | Omar Santiago/ITSC [87.5%] | 7h |
| 210 | 1.3.1.3.3.7 | **CC - Segundo Check point operativo** | 2.32d? | 2018-08-28 | 2018-08-29 |  | 2018-07-27 | 2018-07-30 | 2.32d? | 0.5d |  |  | 9h |
| 211 | 1.3.1.3.3.7.1 | CC - Segundo Check point operativo | 0.57d? | 2018-08-28 | 2018-08-28 | 209 | 2018-07-27 | 2018-07-27 | 0.57d? | 0.5d | 0d | Omar Santiago/ITSC [87.5%] | 2h |
| 212 | 1.3.1.3.3.7.2 | CC - Actualizacion de los puntos del segundo Check point operativo | 1.75d? | 2018-08-28 | 2018-08-29 | 211 | 2018-07-27 | 2018-07-30 | 1.75d? | 0.5d |  | Omar Santiago/ITSC | 7h |
| 213 | 1.3.1.3.4 | **CC - Modulo Alarmas/Reportes/Indicadores de gestión** | 6d? | 2018-06-08 | 2018-06-13 |  | 2018-07-26 | 2018-07-31 | 6d? | 80.32d |  |  | 18h |
| 214 | 1.3.1.3.4.1 | CC - Alarmas | 2d? | 2018-06-08 | 2018-06-11 | 121 | 2018-07-26 | 2018-07-27 | 2d? | 80.32d | 0d | Omar Santiago [75%] | 6h |
| 215 | 1.3.1.3.4.2 | CC - Reportes | 2d? | 2018-06-11 | 2018-06-12 | 214 | 2018-07-26 | 2018-07-27 | 2d? | 80.32d | 0d | Omar Santiago [75%] | 6h |
| 216 | 1.3.1.3.4.3 | CC - Indicadores de gestión | 2d? | 2018-06-12 | 2018-06-13 | 215 | 2018-07-30 | 2018-07-31 | 2d? | 80.32d | 0d | Omar Santiago [75%] | 6h |
| 217 | 1.3.1.4 | **PU - Pruebas Untarias** | 110.5d? | 2018-06-11 | 2018-08-27 |  | 2018-06-19 | 2018-08-01 | 62.85d? | 4.82d |  |  | 60h |
| 218 | 1.3.1.4.1 | **PU - Modulo Catalogos Maestros** | 30d? | 2018-07-23 | 2018-08-13 |  | 2018-06-19 | 2018-07-09 | 29.25d? | 25.82d |  |  | 30h |
| 219 | 1.3.1.4.1.1 | PU - Catalogo Rol | 2d? | 2018-07-23 | 2018-07-24 | 182 | 2018-06-20 | 2018-06-21 | 2d? | 53.82d |  | Omar Santiago/Fernando Nava [25%] | 2h |
| 220 | 1.3.1.4.1.2 | PU - Catalogo Actores | 0.5d? | 2018-07-24 | 2018-07-24 | 183 | 2018-06-19 | 2018-06-19 | 0.5d? | 53.32d |  | Omar Santiago/Fernando Nava | 2h |
| 221 | 1.3.1.4.1.3 | PU - Catalogo Actores-Roles | 2d? | 2018-07-25 | 2018-07-26 | 184 | 2018-06-21 | 2018-06-22 | 2d? | 49.82d |  | Omar Santiago/Fernando Nava [25%] | 2h |
| 222 | 1.3.1.4.1.4 | PU - Catalogo Contratos | 2d? | 2018-07-26 | 2018-07-27 | 185 | 2018-06-21 | 2018-06-22 | 2d? | 47.82d |  | Omar Santiago/Fernando Nava [25%] | 2h |
| 223 | 1.3.1.4.1.5 | PU - Catalogo Tipos de Tarifa | 2d? | 2018-07-27 | 2018-07-30 | 186 | 2018-06-25 | 2018-06-26 | 2d? | 45.82d |  | Omar Santiago/Fernando Nava [25%] | 2h |
| 224 | 1.3.1.4.1.6 | PU - Catalogo Tarifa | 2d? | 2018-07-30 | 2018-07-31 | 187 | 2018-06-25 | 2018-06-26 | 2d? | 43.82d |  | Omar Santiago/Fernando Nava [25%] | 2h |
| 225 | 1.3.1.4.1.7 | PU - Catalogo Conceptos de Tarifa | 2d? | 2018-07-31 | 2018-08-01 | 188 | 2018-06-28 | 2018-06-29 | 2d? | 41.82d |  | Omar Santiago/Fernando Nava [25%] | 2h |
| 226 | 1.3.1.4.1.8 | PU - Catalogo Choferes | 2d? | 2018-08-01 | 2018-08-02 | 189 | 2018-06-28 | 2018-06-29 | 2d? | 39.82d |  | Omar Santiago/Fernando Nava [25%] | 2h |
| 227 | 1.3.1.4.1.9 | PU - Catalogo Camiones | 2d? | 2018-08-02 | 2018-08-03 | 190 | 2018-07-02 | 2018-07-03 | 2d? | 37.82d |  | Omar Santiago/Fernando Nava [25%] | 2h |
| 228 | 1.3.1.4.1.10 | PU - Catalogo Responsables de Incidencias | 2d? | 2018-08-03 | 2018-08-06 | 191 | 2018-07-02 | 2018-07-03 | 2d? | 35.82d |  | Omar Santiago/Fernando Nava [25%] | 2h |
| 229 | 1.3.1.4.1.11 | PU - Catalogo Tipos de Incidencias | 2d? | 2018-08-06 | 2018-08-07 | 192 | 2018-07-04 | 2018-07-05 | 2d? | 33.82d |  | Omar Santiago/Fernando Nava [25%] | 2h |
| 230 | 1.3.1.4.1.12 | PU - Catalogo Tipos de Viaje | 2d? | 2018-08-07 | 2018-08-08 | 193 | 2018-07-04 | 2018-07-05 | 2d? | 31.82d |  | Omar Santiago/Fernando Nava [25%] | 2h |
| 231 | 1.3.1.4.1.13 | PU - Catalogo Tipos de Carga/Descarga | 2d? | 2018-08-08 | 2018-08-09 | 194 | 2018-07-06 | 2018-07-09 | 2d? | 29.82d |  | Omar Santiago/Fernando Nava [25%] | 2h |
| 232 | 1.3.1.4.1.14 | PU - Catalogo Clientes de Entrega | 2d? | 2018-08-09 | 2018-08-10 | 195 | 2018-07-06 | 2018-07-09 | 2d? | 27.82d |  | Omar Santiago/Fernando Nava [25%] | 2h |
| 233 | 1.3.1.4.1.15 | PU - Catalogo Clientes Solicidates | 2d? | 2018-08-10 | 2018-08-13 | 196 | 2018-07-06 | 2018-07-09 | 2d? | 25.82d |  | Omar Santiago/Fernando Nava [25%] | 2h |

| ID | WBS | Task | Duration | Start | Finish | Predecessors | Baseline start | Baseline finish | Baseline duration | Total slack | Free slack | Resources | Work |
| --- | --- | --- | --- | --- | --- | --- | --- | --- | --- | --- | --- | --- | --- |
| 234 | 1.3.1.4.2 | **PU - Modulo Seguridad** | 9.5d? | 2018-08-13 | 2018-08-20 |  | 2018-07-11 | 2018-07-17 | 7.3d? | 14.82d |  |  | 6h |
| 235 | 1.3.1.4.2.1 | PU - Roles | 2d? | 2018-08-13 | 2018-08-14 | 198 | 2018-07-11 | 2018-07-12 | 2d? | 22.32d |  | Omar Santiago/Fernando Nava [25%] | 2h |
| 236 | 1.3.1.4.2.2 | PU - Configuracion | 2d? | 2018-08-15 | 2018-08-16 | 199 | 2018-07-11 | 2018-07-12 | 2d? | 18.82d |  | Omar Santiago/Fernando Nava [25%] | 2h |
| 237 | 1.3.1.4.2.3 | PU - Permisos | 2d? | 2018-08-17 | 2018-08-20 | 200 | 2018-07-16 | 2018-07-17 | 2d? | 14.82d |  | Omar Santiago/Fernando Nava [25%] | 2h |
| 238 | 1.3.1.4.3 | **PU - Modulo Solicitudes** | 10d? | 2018-08-20 | 2018-08-27 |  | 2018-07-18 | 2018-07-26 | 12.67d? | 4.82d |  |  | 15h |
| 239 | 1.3.1.4.3.1 | PU - Cliente - Solicitud de Transporte | 2d? | 2018-08-20 | 2018-08-21 | 202 | 2018-07-18 | 2018-07-19 | 2d? | 12.82d |  | Omar Santiago/Fernando Nava [37.5%] | 3h |
| 240 | 1.3.1.4.3.2 | PU - Trafico - Valoracion del Viaje | 2d? | 2018-08-21 | 2018-08-22 | 203 | 2018-07-18 | 2018-07-19 | 2d? | 10.82d |  | Omar Santiago/Fernando Nava [37.5%] | 3h |
| 241 | 1.3.1.4.3.3 | PU - Distribucion - Asugnacion de Unidad y Carga | 2d? | 2018-08-22 | 2018-08-23 | 204 | 2018-07-20 | 2018-07-23 | 2d? | 8.82d |  | Omar Santiago/Fernando Nava [37.5%] | 3h |
| 242 | 1.3.1.4.3.4 | PU - Operador CL - Operación y Descarga | 2d? | 2018-08-23 | 2018-08-24 | 205 | 2018-07-20 | 2018-07-23 | 2d? | 6.82d |  | Omar Santiago/Fernando Nava [37.5%] | 3h |
| 243 | 1.3.1.4.3.5 | PU - Distribucion - Cierre del Viaje y Facturacion | 2d? | 2018-08-24 | 2018-08-27 | 206 | 2018-07-25 | 2018-07-26 | 2d? | 4.82d |  | Omar Santiago/Fernando Nava [37.5%] | 3h |
| 244 | 1.3.1.4.4 | **PU - Modulo Alarmas/Reportes/Indicadores de gestión** | 6d? | 2018-06-11 | 2018-06-14 |  | 2018-07-27 | 2018-08-01 | 6d? | 84.32d |  |  | 9h |
| 245 | 1.3.1.4.4.1 | PU - Alarmas | 2d? | 2018-06-11 | 2018-06-12 | 214 | 2018-07-27 | 2018-07-30 | 2d? | 113.32d |  | Omar Santiago/Fernando Nava [37.5%] | 3h |
| 246 | 1.3.1.4.4.2 | PU - Reportes | 2d? | 2018-06-12 | 2018-06-13 | 215 | 2018-07-27 | 2018-07-30 | 2d? | 111.32d |  | Omar Santiago/Fernando Nava [37.5%] | 3h |
| 247 | 1.3.1.4.4.3 | PU - Indicadores de gestión | 2d? | 2018-06-13 | 2018-06-14 | 216 | 2018-07-31 | 2018-08-01 | 2d? | 80.32d | 0d | Omar Santiago/Fernando Nava [37.5%] | 3h |
| 248 | 1.3.1.5 | **TD - Termina Desarrollo** | 11d? | 2018-06-14 | 2018-06-21 |  | 2018-08-01 | 2018-08-09 | 11d? | 80.32d |  |  | 38h |
| 249 | 1.3.1.5.1 | **TD - Configuracion en Ambiente QA o TEST** | 11d? | 2018-06-14 | 2018-06-21 |  | 2018-08-01 | 2018-08-09 | 11d? | 80.32d | 0d |  | 38h |
| 250 | 1.3.1.5.1.1 | Configuracion de Java 7 u 8 | 2d? | 2018-06-14 | 2018-06-15 | 247 | 2018-08-01 | 2018-08-02 | 2d? | 80.32d | 0d | Omar Santiago [75%] | 6h |
| 251 | 1.3.1.5.1.2 | Configuracion de Mysql y complementos | 2d? | 2018-06-15 | 2018-06-18 | 250 | 2018-08-02 | 2018-08-03 | 2d? | 80.32d | 0d | Omar Santiago [75%] | 6h |
| 252 | 1.3.1.5.1.3 | Configuracion de Apache Tomcat | 2d? | 2018-06-18 | 2018-06-19 | 251 | 2018-08-03 | 2018-08-06 | 2d? | 80.32d | 0d | Omar Santiago [75%] | 6h |
| 253 | 1.3.1.5.1.4 | Configuracion AppWeb v1 | 5d? | 2018-06-19 | 2018-06-21 | 252 | 2018-08-06 | 2018-08-09 | 5d? | 80.32d |  | Omar Santiago | 20h |
| 254 | 1.3.1.6 | **PI - Pruebas Integrales** | 14d? | 2018-06-21 | 2018-07-02 |  | 2018-08-09 | 2018-08-20 | 14d? | 80.32d |  |  | 34h |
| 255 | 1.3.1.6.1 | **PI - Modulo Catalogos Maestros** | 4d? | 2018-06-21 | 2018-06-25 |  | 2018-08-09 | 2018-08-13 | 4d? | 80.32d |  |  | 15h |
| 256 | 1.3.1.6.1.1 | PI - Catalogo Rol | 2d? | 2018-06-21 | 2018-06-22 | 249 | 2018-08-09 | 2018-08-10 | 2d? | 96.32d |  | Omar Santiago/Fernando Nava/ITSC [12.5%] | 1h |
| 257 | 1.3.1.6.1.2 | PI - Catalogo Actores | 2d? | 2018-06-21 | 2018-06-22 | 249 | 2018-08-09 | 2018-08-10 | 2d? | 96.32d |  | Omar Santiago/Fernando Nava/ITSC [12.5%] | 1h |
| 258 | 1.3.1.6.1.3 | PI - Catalogo Actores-Roles | 2d? | 2018-06-21 | 2018-06-22 | 249 | 2018-08-09 | 2018-08-10 | 2d? | 96.32d |  | Omar Santiago/Fernando Nava/ITSC [12.5%] | 1h |
| 259 | 1.3.1.6.1.4 | PI - Catalogo Contratos | 2d? | 2018-06-21 | 2018-06-22 | 249 | 2018-08-09 | 2018-08-10 | 2d? | 96.32d |  | Omar Santiago/Fernando Nava/ITSC [12.5%] | 1h |
| 260 | 1.3.1.6.1.5 | PI - Catalogo Tipos de Tarifa | 2d? | 2018-06-21 | 2018-06-22 | 249 | 2018-08-09 | 2018-08-10 | 2d? | 96.32d |  | Omar Santiago/Fernando Nava/ITSC [12.5%] | 1h |
| 261 | 1.3.1.6.1.6 | PI - Catalogo Tarifa | 2d? | 2018-06-21 | 2018-06-22 | 249 | 2018-08-09 | 2018-08-10 | 2d? | 96.32d |  | Omar Santiago/Fernando Nava/ITSC [12.5%] | 1h |
| 262 | 1.3.1.6.1.7 | PI - Catalogo Conceptos de Tarifa | 2d? | 2018-06-21 | 2018-06-22 | 249 | 2018-08-09 | 2018-08-10 | 2d? | 96.32d |  | Omar Santiago/Fernando Nava/ITSC [12.5%] | 1h |
| 263 | 1.3.1.6.1.8 | PI - Catalogo Choferes | 2d? | 2018-06-21 | 2018-06-22 | 249 | 2018-08-09 | 2018-08-10 | 2d? | 96.32d |  | Omar Santiago/Fernando Nava/ITSC [12.5%] | 1h |
| 264 | 1.3.1.6.1.9 | PI - Catalogo Camiones | 2d? | 2018-06-21 | 2018-06-22 | 249 | 2018-08-09 | 2018-08-10 | 2d? | 96.32d |  | Omar Santiago/Fernando Nava/ITSC [12.5%] | 1h |
| 265 | 1.3.1.6.1.10 | PI - Catalogo Responsables de Incidencias | 2d? | 2018-06-21 | 2018-06-22 | 249 | 2018-08-09 | 2018-08-10 | 2d? | 80.32d | 0d | Omar Santiago/Fernando Nava/ITSC [12.5%] | 1h |
| 266 | 1.3.1.6.1.11 | PI - Catalogo Tipos de Incidencias | 2d? | 2018-06-22 | 2018-06-25 | 265 | 2018-08-10 | 2018-08-13 | 2d? | 94.32d |  | Omar Santiago/Fernando Nava/ITSC [12.5%] | 1h |
| 267 | 1.3.1.6.1.12 | PI - Catalogo Tipos de Viaje | 2d? | 2018-06-22 | 2018-06-25 | 265 | 2018-08-10 | 2018-08-13 | 2d? | 94.32d |  | Omar Santiago/Fernando Nava/ITSC [12.5%] | 1h |
| 268 | 1.3.1.6.1.13 | PI - Catalogo Tipos de Carga/Descarga | 2d? | 2018-06-22 | 2018-06-25 | 265 | 2018-08-10 | 2018-08-13 | 2d? | 94.32d |  | Omar Santiago/Fernando Nava/ITSC [12.5%] | 1h |
| 269 | 1.3.1.6.1.14 | PI - Catalogo Clientes de Entrega | 2d? | 2018-06-22 | 2018-06-25 | 265 | 2018-08-10 | 2018-08-13 | 2d? | 94.32d |  | Omar Santiago/Fernando Nava/ITSC [12.5%] | 1h |
| 270 | 1.3.1.6.1.15 | PI - Catalogo Clientes Solicidates | 2d? | 2018-06-22 | 2018-06-25 | 265 | 2018-08-10 | 2018-08-13 | 2d? | 80.32d | 0d | Omar Santiago/Fernando Nava/ITSC [12.5%] | 1h |

| ID | WBS | Task | Duration | Start | Finish | Predecessors | Complete | Baseline start | Baseline finish | Baseline duration | Total slack | Free slack | Resources | Work |
| --- | --- | --- | --- | --- | --- | --- | --- | --- | --- | --- | --- | --- | --- | --- |
| 271 | 1.3.1.6.2 | **PI - Modulo Seguridad** | 2d? | 2018-06-25 | 2018-06-26 |  |  | 2018-08-13 | 2018-08-14 | 2d? | 80.32d |  |  | 3h |
| 272 | 1.3.1.6.2.1 | PI - Roles | 2d? | 2018-06-25 | 2018-06-26 | 270 |  | 2018-08-13 | 2018-08-14 | 2d? | 92.32d |  | Omar Santiago/Fernando Nava/ITSC [12.5%] | 1h |
| 273 | 1.3.1.6.2.2 | PI - Configuracion | 2d? | 2018-06-25 | 2018-06-26 | 270 |  | 2018-08-13 | 2018-08-14 | 2d? | 92.32d |  | Omar Santiago/Fernando Nava/ITSC [12.5%] | 1h |
| 274 | 1.3.1.6.2.3 | PI - Permisos | 2d? | 2018-06-25 | 2018-06-26 | 270 |  | 2018-08-13 | 2018-08-14 | 2d? | 80.32d | 0d | Omar Santiago/Fernando Nava/ITSC [12.5%] | 1h |
| 275 | 1.3.1.6.3 | **PI - Modulo Solicitudes** | 4d? | 2018-06-26 | 2018-06-28 |  |  | 2018-08-14 | 2018-08-16 | 4d? | 80.32d |  |  | 10h |
| 276 | 1.3.1.6.3.1 | PI - Cliente - Solicitud de Transporte | 2d? | 2018-06-26 | 2018-06-27 | 274 |  | 2018-08-14 | 2018-08-15 | 2d? | 90.32d |  | Omar Santiago/Fernando Nava/ITSC [25%] | 2h |
| 277 | 1.3.1.6.3.2 | PI - Trafico - Valoracion del Viaje | 2d? | 2018-06-26 | 2018-06-27 | 274 |  | 2018-08-14 | 2018-08-15 | 2d? | 90.32d |  | Omar Santiago/Fernando Nava/ITSC [25%] | 2h |
| 278 | 1.3.1.6.3.3 | PI - Distribucion - Asugnacion de Unidad y Carga | 2d? | 2018-06-26 | 2018-06-27 | 274 |  | 2018-08-14 | 2018-08-15 | 2d? | 80.32d | 0d | Omar Santiago/Fernando Nava/ITSC [25%] | 2h |
| 279 | 1.3.1.6.3.4 | PI - Operador CL - Operación y Descarga | 2d? | 2018-06-27 | 2018-06-28 | 278 |  | 2018-08-15 | 2018-08-16 | 2d? | 88.32d |  | Omar Santiago/Fernando Nava/ITSC [25%] | 2h |
| 280 | 1.3.1.6.3.5 | PI - Distribucion - Cierre del Viaje y Facturacion | 2d? | 2018-06-27 | 2018-06-28 | 278 |  | 2018-08-15 | 2018-08-16 | 2d? | 80.32d | 0d | Omar Santiago/Fernando Nava/ITSC [25%] | 2h |
| 281 | 1.3.1.6.4 | **PI - Modulo Alarmas/Reportes/Indicadores de gestión** | 4d? | 2018-06-28 | 2018-07-02 |  |  | 2018-08-16 | 2018-08-20 | 4d? | 80.32d |  |  | 6h |
| 282 | 1.3.1.6.4.1 | PI - Alarmas | 2d? | 2018-06-28 | 2018-06-29 | 280 |  | 2018-08-16 | 2018-08-17 | 2d? | 86.32d |  | Omar Santiago/Fernando Nava/ITSC [25%] | 2h |
| 283 | 1.3.1.6.4.2 | PI - Reportes | 2d? | 2018-06-28 | 2018-06-29 | 280 |  | 2018-08-16 | 2018-08-17 | 2d? | 80.32d | 0d | Omar Santiago/Fernando Nava/ITSC [25%] | 2h |
| 284 | 1.3.1.6.4.3 | PI - Indicadores de gestión | 2d? | 2018-06-29 | 2018-07-02 | 283 |  | 2018-08-17 | 2018-08-20 | 2d? | 80.32d | 0d | Omar Santiago/Fernando Nava/ITSC [25%] | 2h |
| 285 | 1.3.2 | PI - Cierre Pruebas Integrales | 2d? | 2018-07-02 | 2018-07-03 | 284 |  | 2018-08-20 | 2018-08-21 | 2d? | 80.32d | 0d | Omar Santiago/Fernando Nava/ITSC [25%] | 2h |
| 286 | 2 | **LB - Liberacion a Produccion** | 2d? | 2018-07-03 | 2018-07-04 |  |  | 2018-08-21 | 2018-08-22 | 2d? | 80.32d |  |  | 8h |
| 287 | 2.1 | LB - Liberacion y Cierre | 2d? | 2018-07-03 | 2018-07-04 | 285 |  | 2018-08-21 | 2018-08-22 | 2d? | 80.32d |  | Omar Santiago/Fernando Nava/ITSC | 8h |
| 288 | 3 | Monitoreo y Control | 2d? | 2018-05-24 A | 2018-05-24 A |  | 100% | 2018-05-24 | 2018-05-24 | 2d? |  |  |  |  |
